# basic_one_task_test

How a schedule from MS Project changed from version to version. A marks actual dates.

## Version 1 (saved 2014-08-21)

Note of the change: 初始化

| ID | WBS | Task | Duration | Start | Finish | Predecessors | Total float | Constraint |
| --- | --- | --- | --- | --- | --- | --- | --- | --- |
| 212 | 1 | **项目周例会跟踪风险和度量 15** | 0.5d | 2023-06-19 08:00 | 2023-06-19 12:00 |  | 0d | must start on 2023-06-19 08:00 |
| 211 | 1.1 | **项目周例会跟踪风险和度量 14** | 0.5d | 2023-06-05 08:00 | 2023-06-05 12:00 |  | 0d | must start on 2023-06-05 08:00 |
| 210 |  | 项目周例会跟踪风险和度量 13 | 0.5d | 2023-05-22 08:00 | 2023-05-22 12:00 |  | 0d | must start on 2023-05-22 08:00 |
| 209 |  | 项目周例会跟踪风险和度量 12 | 0.5d | 2022-05-08 08:00 | 2022-05-09 12:00 |  | 0d | must start on 2022-05-08 08:00 |
| 208 |  | 项目周例会跟踪风险和度量 11 | 0.5d | 2022-09-12 08:00 | 2022-09-12 12:00 |  | 0d | must start on 2022-09-12 08:00 |
| 207 |  | 项目周例会跟踪风险和度量 10 | 0.5d | 2022-08-29 08:00 | 2022-08-29 12:00 |  | 0d | must start on 2022-08-29 08:00 |
| 206 |  | 项目周例会跟踪风险和度量 9 | 0.5d | 2022-08-15 08:00 | 2022-08-15 12:00 |  | 0d | must start on 2022-08-15 08:00 |
| 205 |  | 项目周例会跟踪风险和度量 8 | 0.5d | 2022-08-01 08:00 | 2022-08-01 12:00 |  | 0d | must start on 2022-08-01 08:00 |
| 204 |  | 项目周例会跟踪风险和度量 7 | 0.5d | 2022-07-18 08:00 | 2022-07-18 12:00 |  | 0d | must start on 2022-07-18 08:00 |
| 203 |  | 项目周例会跟踪风险和度量 6 | 0.5d | 2022-07-04 08:00 | 2022-07-04 12:00 |  | 0d | must start on 2022-07-04 08:00 |
| 202 |  | 项目周例会跟踪风险和度量 5 | 0.5d | 2022-06-20 08:00 | 2022-06-20 12:00 |  | 0d | must start on 2022-06-20 08:00 |
| 201 |  | 项目周例会跟踪风险和度量 4 | 0.5d | 2022-06-06 08:00 | 2022-06-06 12:00 |  | 0d | must start on 2022-06-06 08:00 |
| 200 |  | 项目周例会跟踪风险和度量 3 | 0.5d | 2022-05-23 08:00 | 2022-05-23 12:00 |  | 0d | must start on 2022-05-23 08:00 |
| 199 |  | 项目周例会跟踪风险和度量 2 | 0.5d | 2022-05-09 08:00 | 2022-05-09 12:00 |  | 0d | must start on 2022-05-09 08:00 |
| 198 |  | 项目周例会跟踪风险和度量 1 | 0.5d | 2022-04-25 08:00 | 2022-04-25 12:00 |  | 0d | must start on 2022-04-25 08:00 |
| 197 | 1.2 | **项目周例会跟踪风险和度量** | 300.5d | 2022-04-25 08:00 | 2023-06-19 12:00 |  | 0d |  |
| 196 |  | 周期性质量保证活动 6 | 0.5d | 2022-09-20 08:00 | 2022-09-20 12:00 |  | 0d | must start on 2022-09-20 08:00 |
| 195 |  | 周期性质量保证活动 5 | 0.5d | 2022-08-10 08:00 | 2022-08-10 12:00 |  | 0d | must start on 2022-08-10 08:00 |
| 194 |  | 周期性质量保证活动 4 | 0.5d | 2022-07-12 08:00 | 2022-07-12 12:00 |  | 0d | must start on 2022-07-12 08:00 |
| 193 |  | 周期性质量保证活动 3 | 0.5d | 2022-06-20 08:00 | 2022-06-20 12:00 |  | 0d | must start on 2022-06-20 08:00 |
| 192 |  | 周期性质量保证活动 2 | 0.5d | 2022-06-22 08:00 | 2022-06-22 12:00 |  | 0d | must start on 2022-06-22 08:00 |
| 191 |  | 周期性质量保证活动 1 | 0.5d | 2022-05-22 08:00 | 2022-05-23 12:00 |  | 0d | must start on 2022-05-22 08:00 |
| 190 | 1.3 | **周期性质量保证活动** | 86.5d | 2022-05-22 08:00 | 2022-09-20 12:00 |  | 0d |  |
| 189 |  | 需求跟踪矩阵的维护-测试 | 0.25d | 2022-09-10 08:00 | 2022-09-12 10:00 |  | 0d | must start on 2022-09-10 08:00 |
| 188 |  | 需求跟踪矩阵的维护-编码 | 0.25d | 2022-09-08 08:00 | 2022-09-08 10:00 | 106 | 0d | must start on 2022-09-08 08:00 |
| 187 |  | 需求跟踪矩阵的维护-设计 | 0.31d | 2022-07-27 13:30 | 2022-07-27 16:00 | 67 | 0d | must start on 2022-07-27 13:30 |
| 186 |  | 需求跟踪矩阵的维护-需求 | 0.25d | 2022-06-03 13:00 | 2022-06-03 15:00 |  | 0d | must start on 2022-06-03 13:00 |
| 185 | 1.4 | **需求管理** | 70.75d | 2022-06-03 13:00 | 2022-09-12 10:00 |  | 0d |  |
| 184 |  | 配置管理 6 | 0.5d | 2022-09-12 08:00 | 2022-09-12 12:00 |  | 0d | must start on 2022-09-12 08:00 |
| 183 |  | 配置管理 5 | 0.5d | 2022-08-31 08:00 | 2022-08-31 12:00 |  | 0d | must start on 2022-08-31 08:00 |
| 182 |  | 配置管理 4 | 0.5d | 2022-08-20 08:00 | 2022-08-22 12:00 |  | 0d | must start on 2022-08-20 08:00 |
| 181 |  | 配置管理 3 | 0.5d | 2022-08-03 08:00 | 2022-08-03 12:00 |  | 0d | must start on 2022-08-03 08:00 |
| 180 |  | 配置管理 2 | 0.5d | 2022-06-24 08:00 | 2022-06-24 12:00 |  | 0d | must start on 2022-06-24 08:00 |
| 179 |  | 配置管理 1 | 0.5d | 2022-05-22 08:00 | 2022-05-23 12:00 |  | 0d | must start on 2022-05-22 08:00 |
| 178 |  | 搭建配置库 | 0.5d | 2022-04-28 08:00 | 2022-04-28 12:00 |  | 0d | must start on 2022-04-28 08:00 |
| 177 | 1.5 | **配置管理** | 97.5d | 2022-04-28 08:00 | 2022-09-12 12:00 |  | 0d |  |
| 176 |  | EPG将度量数据、优秀案例、经验教训等纳入组织财富库 | 0.5d | 2022-10-24 10:15 | 2022-10-24 15:15 | 175 | 0d | must start on 2022-10-24 10:15 |
| 175 |  | 更新《项目总结报告》 | 0.5d | 2022-10-21 15:15 | 2022-10-24 10:15 | 174 | 0d | must start on 2022-10-21 15:15 |
| 174 |  | 项目总结大会（总结度量、经验以及教训） | 0.06d | 2022-10-21 14:45 | 2022-10-21 15:15 | 173 | 0d | must start on 2022-10-21 14:45 |
| 173 |  | 编写《项目总结报告》,收集相关经验 | 0.5d | 2022-10-21 09:30 | 2022-10-21 14:30 |  | 0d | must start on 2022-10-21 09:30 |
| 172 | 1.6 | **项目总结** | 1.59d | 2022-10-21 09:30 | 2022-10-24 15:15 | 169 | 0d |  |
| 171 | 1.6.1 | **必要时对相关计划进行相应调整** | 0.5d | 2022-10-20 14:15 | 2022-10-21 09:15 | 170 | 0d | must start on 2022-10-20 14:15 |
| 170 |  | 召开验收里程碑评审会议，填写《验收里程碑状态报告》 | 0.25d | 2022-10-20 11:15 | 2022-10-20 14:15 | 168 | 0d | must start on 2022-10-20 11:15 |
| 169 | 1.6.2 | **验收里程碑** | 0.75d | 2022-10-20 11:15 | 2022-10-21 09:15 |  | 0d |  |
| 168 |  | 填写产品基线《发布报告》 | 1d | 2022-10-19 11:00 | 2022-10-20 11:00 | 167 | 0d | must start on 2022-10-19 11:00 |
| 167 |  | 配置管理在配置库中建立产品基线 | 1d | 2022-10-18 10:45 | 2022-10-19 10:45 | 166 | 0d | must start on 2022-10-18 10:45 |
| 166 |  | QA和CM对配置库进行功能审计和物理审计 | 0.5d | 2022-10-17 14:45 | 2022-10-18 09:45 | 165 | 0d | must start on 2022-10-17 14:45 |
| 165 |  | 产品基线建立申请,填写《基线建立申请》 | 1d | 2022-10-14 14:30 | 2022-10-17 14:30 | 163 | 0d | must start on 2022-10-14 14:30 |
| 164 | 1.6.3 | **建立产品基线** | 3.69d | 2022-10-14 14:30 | 2022-10-20 11:00 |  | 0d |  |
| 163 |  | 编写《验收报告》,客户确认 | 1d | 2022-10-13 14:15 | 2022-10-14 14:15 | 162 | 0d | must start on 2022-10-13 14:15 |
| 162 |  | 记录验收测试BUG,并进行修正至关闭 | 0.5d | 2022-10-13 09:15 | 2022-10-13 14:15 | 161 | 0d | must start on 2022-10-13 09:15 |
| 161 |  | 执行验收测试 | 5d | 2022-10-06 09:15 | 2022-10-13 09:15 | 160 | 0d | must start on 2022-10-06 09:15 |
| 160 |  | 测试人员与客户共同编写《验收测试用例》 | 1d | 2022-10-05 09:15 | 2022-10-06 09:15 | 159 | 0d | must start on 2022-10-05 09:15 |
| 159 |  | 项目经理向客户提出验收申请，编写《验收计划》 | 1d | 2022-10-04 09:15 | 2022-10-05 09:15 |  | 0d | must start on 2022-10-04 09:15 |
| 158 | 1.6.4 | **验收** | 8.5d | 2022-10-04 09:15 | 2022-10-14 14:15 |  | 0d |  |
| 157 |  | 系统安装部署,用户确认 | 0.5d | 2022-10-17 08:00 | 2022-10-17 12:00 | 156 | 0d | must start on 2022-10-17 08:00 |
| 156 |  | 配置管理员根据《产品交接验收单》将产品基线中的配置项放入产品库 | 1d | 2022-10-14 08:00 | 2022-10-14 17:00 | 155 | 0d | must start on 2022-10-14 08:00 |
| 155 |  | 产品进行打包，编写《产品打包清单》 | 0.5d | 2022-10-13 13:00 | 2022-10-13 17:00 | 154 | 0d | must start on 2022-10-13 13:00 |
| 154 |  | QA检查<用户手册>记录不符合项进行修正 | 0.5d | 2022-10-13 08:00 | 2022-10-13 12:00 | 153 | 0d | must start on 2022-10-13 08:00 |
| 153 |  | 更新完善<用户手册> | 1d | 2022-10-12 08:00 | 2022-10-12 17:00 | 152 | 0d | must start on 2022-10-12 08:00 |
| 152 |  | 更新完善《产品交接验收单》 | 1d | 2022-10-11 08:00 | 2022-10-11 17:00 | 151 | 0d | must start on 2022-10-11 08:00 |
| 151 |  | 制定《系统上线验收计划》提交客户确认 | 1d | 2022-10-09 08:00 | 2022-10-10 17:00 |  | 0d | must start on 2022-10-09 08:00 |
| 150 |  | 试运行 | 5.5d | 2022-10-09 08:00 | 2022-10-17 12:00 |  | 0d |  |
| 149 | 1.7 | **上线及验收 （产品交付）** | 13d | 2022-10-04 09:15 | 2022-10-21 09:15 | 133 | 0d |  |
| 148 | 1.7.1 | **项目经理对项目计划进行阶段性调整** | 2d | 2022-10-19 08:15 | 2022-10-21 08:15 | 147 | 0d | must start on 2022-10-19 08:15 |
| 147 |  | 召开测试里程碑评审会议,填写《编码里程碑状态报告》 | 0.5d | 2022-10-18 13:15 | 2022-10-19 08:15 | 145 | 0d | must start on 2022-10-18 13:15 |
| 146 | 1.7.2 | **测试阶段里程碑** | 2.5d | 2022-10-18 13:15 | 2022-10-21 08:15 |  | 0d |  |
| 145 |  | 填写测试基线《发布报告》 | 2d | 2022-10-14 13:15 | 2022-10-18 13:15 | 144 | 0d | must start on 2022-10-14 13:15 |
| 144 |  | 配置管理在配置库中建立测试基线 | 2d | 2022-10-12 13:00 | 2022-10-14 12:00 | 143 | 0d | must start on 2022-10-12 13:00 |
| 143 |  | QA和CM对配置库进行功能审计和物理审计 | 1d | 2022-10-11 13:00 | 2022-10-12 12:00 | 142 | 0d | must start on 2022-10-11 13:00 |

| ID | WBS | Task | Duration | Start | Finish | Predecessors | Total float | Constraint |
| --- | --- | --- | --- | --- | --- | --- | --- | --- |
| 142 |  | 测试基线建立申请,填写《基线建立申请》 | 1.94d | 2022-10-07 13:30 | 2022-10-11 12:00 | 140 | 0d | must start on 2022-10-07 13:30 |
| 141 | 1.7.3 | **建立测试基线** | 6.97d | 2022-10-07 13:30 | 2022-10-18 13:15 |  | 0d |  |
| 140 |  | 统计分析测试数据编写<系统测试报告> | 2d | 2022-10-05 13:30 | 2022-10-07 13:30 | 139 | 0d | must start on 2022-10-05 13:30 |
| 139 |  | 记录测试中发现的BUG并进行修改 | 2d | 2022-10-03 13:00 | 2022-10-05 12:00 | 138 | 0d | must start on 2022-10-03 13:00 |
| 138 |  | 执行回归测试 | 4d | 2022-09-27 13:00 | 2022-10-03 12:00 | 137 | 0d | must start on 2022-09-27 13:00 |
| 137 |  | 执行系统测试 | 6.5d | 2022-09-17 13:00 | 2022-09-27 12:00 | 136 | 0d | must start on 2022-09-17 13:00 |
| 136 |  | 搭建系统测试环境 | 2d | 2022-09-13 13:00 | 2022-09-15 12:00 | 135 | 0d | must start on 2022-09-13 13:00 |
| 135 |  | 测试前进行测试用例自评 | 1d | 2022-09-12 13:00 | 2022-09-13 12:00 |  | 0d | must start on 2022-09-12 13:00 |
| 134 |  | 系统测试 | 19.06d | 2022-09-12 13:00 | 2022-10-07 13:30 |  | 0d |  |
| 133 | 1.8 | **系统测试** | 28.53d | 2022-09-12 13:00 | 2022-10-21 08:15 |  | 0d |  |
| 132 | 1.8.1 | **项目经理对项目计划进行阶段性调整，完善《需求跟踪矩阵》** | 1d | 2022-09-29 10:45 | 2022-09-30 10:45 | 131 | 0d | must start on 2022-09-29 10:45 |
| 131 |  | 召开实现里程碑评审会议,填写《编码里程碑状态报告》 | 0d | 2022-09-28 15:45 | 2022-09-28 15:45 | 129 | 0d | must start on 2022-09-28 15:45 |
| 130 | 1.8.2 | **实现阶段里程碑** | 1.5d | 2022-09-28 15:45 | 2022-09-30 10:45 |  | 0d |  |
| 129 |  | 填写开发基线《发布报告》 | 0.25d | 2022-09-28 13:15 | 2022-09-28 15:15 | 128 | 0d | must start on 2022-09-28 13:15 |
| 128 |  | 配置管理在配置库中建立开发基线 | 1d | 2022-09-27 13:15 | 2022-09-28 13:15 | 127 | 0d | must start on 2022-09-27 13:15 |
| 127 |  | QA和CM对配置库进行功能审计和物理审计 | 0.5d | 2022-09-27 08:00 | 2022-09-27 12:00 | 126 | 0d | must start on 2022-09-27 08:00 |
| 126 |  | 开发基线建立申请,填写《基线建立申请》 | 1d | 2022-09-26 08:00 | 2022-09-26 17:00 | 124SS | 0d | must start on 2022-09-26 08:00 |
| 125 | 1.8.3 | **建立开发基线** | 2.78d | 2022-09-26 08:00 | 2022-09-28 15:15 |  | 0d |  |
| 124 |  | 编写《产品集成阶段报告》 | 0.97d | 2022-09-23 08:00 | 2022-09-23 16:45 | 123 | 0d | must start on 2022-09-23 08:00 |
| 123 |  | 问题修复处理 | 0.97d | 2022-09-22 08:15 | 2022-09-22 17:00 | 122 | 0d | must start on 2022-09-22 08:15 |
| 122 |  | 准备完毕进行产品集成，进行集成测试 | 1d | 2022-09-21 08:00 | 2022-09-21 17:00 | 121 | 0d | must start on 2022-09-21 08:00 |
| 121 |  | 进行产品集成,模块集成过程中编写<产品集成模块核查报告> | 1d | 2022-09-20 08:00 | 2022-09-20 17:00 | 120 | 0d | must start on 2022-09-20 08:00 |
| 120 |  | 依据<产品集成检查列表>,<接口列表>进行检查 | 1d | 2022-09-19 08:00 | 2022-09-19 17:00 | 119 | 0d | must start on 2022-09-19 08:00 |
| 119 |  | 搭建集成环境 | 1d | 2022-09-15 16:30 | 2022-09-16 16:30 | 117 | 0d | must start on 2022-09-15 16:30 |
| 118 | 1.8.4 | **产品集成** | 6.03d | 2022-09-15 16:30 | 2022-09-23 16:45 |  | 0d |  |
| 117 |  | 接口进行评审 | 0.5d | 2022-09-15 11:30 | 2022-09-15 16:30 | 116 | 0d | must start on 2022-09-15 11:30 |
| 116 |  | 完善<接口定义书> | 0.38d | 2022-09-15 08:30 | 2022-09-15 11:30 | 115 | 0d | must start on 2022-09-15 08:30 |
| 115 |  | QA检查《单元测试报告》和《单元测试BUG记录》 | 0.5d | 2022-09-14 13:15 | 2022-09-15 08:15 | 114 | 0d | must start on 2022-09-14 13:15 |
| 114 |  | 编写《单元测试报告》 | 1d | 2022-09-13 13:15 | 2022-09-14 13:15 | 113 | 0d | must start on 2022-09-13 13:15 |
| 113 |  | 单元测试执行过程中发现的缺陷记录《单元测试BUG记录》 | 1d | 2022-09-12 13:15 | 2022-09-13 13:15 | 112 | 0d | must start on 2022-09-12 13:15 |
| 112 |  | 依据《单元测试用例》执行单元测试 | 5.03d | 2022-09-05 13:00 | 2022-09-12 13:15 | 96 | 0d | must start on 2022-09-05 13:00 |
| 111 | 1.8.5 | **执行单元测试** | 8.44d | 2022-09-05 13:00 | 2022-09-15 16:30 |  | 0d |  |
| 110 |  | QA检查＜单元测试用例＞记录不符合项并修正 | 1d | 2022-09-12 08:15 | 2022-09-13 08:15 | 109 | 0d | must start on 2022-09-12 08:15 |
| 109 |  | 评审＜单元测试用例＞，记录缺陷并修正 | 1d | 2022-09-09 08:15 | 2022-09-12 08:15 | 107 | 0d | must start on 2022-09-09 08:15 |
| 108 | 1.8.6 | **编写单元测试用例（编码期间完善，日期为截止日期）** | 2d | 2022-09-09 08:15 | 2022-09-13 08:15 |  | 0d |  |
| 107 |  | 完善单元测试用例（编码期间完善） | 1d | 2022-09-08 08:00 | 2022-09-08 17:00 |  | 0d | must start on 2022-09-08 08:00 |
| 106 |  | 核心代码交叉走查（编码期间完善） | 0.5d | 2022-09-07 13:00 | 2022-09-07 17:00 | 105 | 0d | must start on 2022-09-07 13:00 |
| 105 |  | 完善<单元测试计划>（编码期间完善） | 1d | 2022-09-06 13:00 | 2022-09-07 12:00 | 104 | 0d | must start on 2022-09-06 13:00 |
| 104 |  | 完善<产品集成计划>（编码期间完善） | 1d | 2022-09-05 13:00 | 2022-09-06 12:00 | 102 | 0d | must start on 2022-09-05 13:00 |
| 103 | 1.8.7 | **代码审查（编码期间完善，日期为截止日期）** | 3.5d | 2022-09-05 13:00 | 2022-09-08 17:00 |  | 0d |  |
| 102 |  | 选手管理&系统配置管理 | 2.5d | 2022-08-16 10:30 | 2022-08-18 15:30 | 101 | 0d | must start on 2022-08-16 10:30 |
| 101 |  | 排班统计 | 4.97d | 2022-08-09 10:00 | 2022-08-16 09:45 | 100 | 0d | must start on 2022-08-09 10:00 |
| 100 |  | 消息通知&公告管理 | 2.62d | 2022-08-04 13:45 | 2022-08-09 09:45 | 99 | 0d | must start on 2022-08-04 13:45 |
| 99 |  | 赛事管理&排班管理 | 5d | 2022-07-28 13:00 | 2022-08-04 12:00 | 98 | 0d | must start on 2022-07-28 13:00 |
| 98 |  | 账号管理&裁判管理 | 5d | 2022-07-21 13:00 | 2022-07-28 12:00 | 97 | 0d | must start on 2022-07-21 13:00 |
| 97 |  | 认证登录&个人中心 | 5d | 2022-07-14 13:00 | 2022-07-21 12:00 | 78 | 0d | must start on 2022-07-14 13:00 |
| 96 |  | 编码 | 25.31d | 2022-07-14 13:00 | 2022-08-18 15:30 |  | 0d |  |
| 95 | 1.9 | **系统编码实现** | 55.84d | 2022-07-14 13:00 | 2022-09-30 10:45 |  | 0d |  |
| 94 | 1.9.1 | **项目经理对项目计划进行阶段性调整，完善《需求跟踪矩阵》** | 0.25d | 2022-07-22 10:00 | 2022-07-22 12:00 | 93 | 0d | must start on 2022-07-22 10:00 |
| 93 |  | 召开设计里程碑评审会议,填写《设计里程碑状态报告》 | 0.25d | 2022-07-22 08:00 | 2022-07-22 10:00 | 91 | 0d | must start on 2022-07-22 08:00 |
| 92 | 1.9.2 | **设计里程碑** | 0.5d | 2022-07-22 08:00 | 2022-07-22 12:00 |  | 0d |  |
| 91 |  | 填写设计基线《发布报告》 | 0.5d | 2022-07-21 13:00 | 2022-07-21 17:00 | 90 | 0d | must start on 2022-07-21 13:00 |
| 90 |  | 配置管理在配置库中建立设计基线 | 0.5d | 2022-07-21 08:00 | 2022-07-21 12:00 | 89 | 0d | must start on 2022-07-21 08:00 |
| 89 |  | QA和CM对配置库进行功能审计 | 0.5d | 2022-07-20 13:00 | 2022-07-20 17:00 | 88 | 0d | must start on 2022-07-20 13:00 |
| 88 |  | 设计基线建立申请,填写《基线建立申请》 | 0.5d | 2022-07-20 08:00 | 2022-07-20 12:00 | 75 | 0d | must start on 2022-07-20 08:00 |
| 87 |  | 建立设计基线 | 2d | 2022-07-20 08:00 | 2022-07-21 17:00 |  | 0d |  |
| 86 |  | 编写<产品集成计划> | 1d | 2022-07-26 13:00 | 2022-07-27 12:00 | 85 | 0d | must start on 2022-07-26 13:00 |
| 85 |  | 编写<接口定义书> | 1d | 2022-07-25 13:00 | 2022-07-26 12:00 | 84 | 0d | must start on 2022-07-25 13:00 |
| 84 |  | 编写<接口列表> | 0.5d | 2022-07-23 08:00 | 2022-07-25 12:00 | 83 | 0d | must start on 2022-07-23 08:00 |
| 83 |  | 编写<用户操作手册>初稿 | 2d | 2022-07-21 08:00 | 2022-07-22 17:00 | 82 | 0d | must start on 2022-07-21 08:00 |
| 82 | 1.9.8 | **编写<交付件一览表>初稿** | 1d | 2022-07-20 08:00 | 2022-07-20 17:00 |  | 0d | must start on 2022-07-20 08:00 |
| 81 |  | 依据《详细设计说明书》《单元测试计划》编制《单元测试用例》 | 1d | 2022-07-02 13:00 | 2022-07-04 17:00 |  | 0d | must start on 2022-07-02 13:00 |
| 80 |  | 依据《详细设计说明书》编制《单元测试计划》 | 1d | 2022-07-16 08:00 | 2022-07-18 17:00 |  | 0d | must start on 2022-07-16 08:00 |
| 79 |  | 完善《需求跟踪矩阵》 | 1d | 2022-07-05 13:00 | 2022-07-06 12:00 |  | 0d | must start on 2022-07-05 13:00 |
| 78 |  | QA检查<详细设计>记录不符合项并修正 | 1d | 2022-07-13 13:00 | 2022-07-14 12:00 | 77 | 0d | must start on 2022-07-13 13:00 |
| 77 |  | 评审<详细设计>,记录缺陷并修正 | 1d | 2022-07-12 13:00 | 2022-07-13 12:00 | 76 | 0d | must start on 2022-07-12 13:00 |
| 76 |  | 依据《概要设计说明书》编写《详细设计说明书》 | 5d | 2022-07-05 13:00 | 2022-07-12 12:00 |  | 0d | must start on 2022-07-05 13:00 |
| 75 | 1.9.9 | **系统详细设计** | 11d | 2022-07-02 13:00 | 2022-07-18 17:00 | 73 | 0d |  |
| 74 |  | 数据库初步设计 | 1d | 2022-06-24 13:00 | 2022-06-27 12:00 |  | 0d | must start on 2022-06-24 13:00 |
| 73 |  | 评审<概要设计>,记录缺陷并修正 | 1d | 2022-07-04 08:00 | 2022-07-04 17:00 | 72 | 0d | must start on 2022-07-04 08:00 |

| ID | WBS | Task | Duration | Start | Finish | Predecessors | Total float | Constraint |
| --- | --- | --- | --- | --- | --- | --- | --- | --- |
| 72 |  | 进行总体设计,编写《概要设计书》 | 5d | 2022-06-25 13:00 | 2022-07-01 17:00 | 70 | 0d | must start on 2022-06-25 13:00 |
| 71 | 1.9.10 | **系统概要设计** | 6.5d | 2022-06-24 13:00 | 2022-07-04 17:00 | 68 | 0d |  |
| 70 |  | 技术解决方案制定，购买复用分析 | 1d | 2022-06-23 13:00 | 2022-06-24 12:00 | 69 | 0d | must start on 2022-06-23 13:00 |
| 69 |  | 完善技术方案,必要情况进行决策分析形成《决策分析报告》 | 1d | 2022-06-18 13:00 | 2022-06-20 17:00 |  | 0d | must start on 2022-06-18 13:00 |
| 68 |  | 决策分析 | 4.5d | 2022-06-18 13:00 | 2022-06-24 12:00 |  | 0d |  |
| 67 | 1.10 | **系统设计** | 27.5d | 2022-06-18 13:00 | 2022-07-27 12:00 | 41 | 0d |  |
| 66 | 1.10.1 | **项目经理对项目计划进行阶段性调整，完善《需求跟踪矩阵》** | 0.25d | 2022-06-23 10:00 | 2022-06-23 12:00 | 65 | 0d | must start on 2022-06-23 10:00 |
| 65 |  | 需求里程碑会议,填写《需求里程碑状态报告》 | 0.25d | 2022-06-23 08:00 | 2022-06-23 10:00 | 63 | 0d | must start on 2022-06-23 08:00 |
| 64 | 1.10.2 | **需求里程碑** | 0.5d | 2022-06-23 08:00 | 2022-06-23 12:00 | 59 | 0d |  |
| 63 |  | 填写需求基线《发布报告》 | 0.5d | 2022-06-22 13:00 | 2022-06-22 17:00 | 62 | 0d | must start on 2022-06-22 13:00 |
| 62 |  | 配置管理在配置库中建立需求基线 | 0.5d | 2022-06-22 08:00 | 2022-06-22 12:00 | 61 | 0d | must start on 2022-06-22 08:00 |
| 61 |  | QA和CM对配置库进行功能和物理审计 | 0.5d | 2022-06-20 13:00 | 2022-06-20 17:00 | 60 | 0d | must start on 2022-06-20 13:00 |
| 60 |  | 需求基线建立申请,填写《基线建立申请》 | 0.5d | 2022-06-19 08:00 | 2022-06-20 12:00 |  | 0d | must start on 2022-06-19 08:00 |
| 59 | 1.10.3 | **建立需求基线** | 3d | 2022-06-19 08:00 | 2022-06-22 17:00 | 58 | 0d |  |
| 58 |  | 评审<系统测试用例>记录并修改缺陷 | 1d | 2022-06-16 08:15 | 2022-06-17 08:15 | 57 | 0d | must start on 2022-06-16 08:15 |
| 57 |  | QA检查《产品需求说明书》和《系统测试用例》 | 1d | 2022-06-15 08:00 | 2022-06-15 17:00 | 56 | 0d | must start on 2022-06-15 08:00 |
| 56 |  | 依据《产品需求说明书》编写《系统测试用例》 | 2d | 2022-06-09 08:00 | 2022-06-10 17:00 |  | 0d | must start on 2022-06-09 08:00 |
| 55 |  | 完善<项目进度计划>，完善<项目计划书> | 1d | 2022-06-09 13:45 | 2022-06-10 13:45 | 54 | 0d | must start on 2022-06-09 13:45 |
| 54 |  | 评审《测试计划》并发布 | 1d | 2022-06-08 13:45 | 2022-06-09 13:45 | 53 | 0d | must start on 2022-06-08 13:45 |
| 53 |  | 完善编写《测试计划》 | 2d | 2022-06-06 13:45 | 2022-06-08 13:45 | 52 | 0d | must start on 2022-06-06 13:45 |
| 52 |  | 完善<项目估算>和《需求跟踪矩阵》 | 1d | 2022-06-03 13:45 | 2022-06-06 13:45 | 51 | 0d | must start on 2022-06-03 13:45 |
| 51 |  | 评审<产品需求说明书>,记录并修改缺陷 | 0.5d | 2022-06-02 16:45 | 2022-06-03 11:45 | 50 | 0d | must start on 2022-06-02 16:45 |
| 50 |  | 编写《产品需求说明书》 | 6d | 2022-05-25 16:45 | 2022-06-02 16:45 | 49 | 0d | must start on 2022-05-25 16:45 |
| 49 |  | <用户需求说明书>提交客户确认 | 0.5d | 2022-05-25 11:45 | 2022-05-25 16:45 | 48 | 0d | must start on 2022-05-25 11:45 |
| 48 |  | QA检查<用户需求说明书>并记录不符合项并修改 | 0.5d | 2022-05-24 16:45 | 2022-05-25 11:45 | 47 | 0d | must start on 2022-05-24 16:45 |
| 47 |  | 评审<用户需求说明书>,记录并修改缺陷 | 0.5d | 2022-05-24 11:45 | 2022-05-24 16:45 | 46 | 0d | must start on 2022-05-24 11:45 |
| 46 |  | 分析需求,编写《用户需求说明书》 | 5d | 2022-05-17 11:00 | 2022-05-24 11:00 |  | 0d | must start on 2022-05-17 11:00 |
| 45 | 1.10.4 | **需求分析** | 22.66d | 2022-05-17 11:00 | 2022-06-17 08:15 | 42 | 0d |  |
| 44 |  | 编写《需求跟踪矩阵》填写原始需求 | 0.5d | 2022-05-17 09:00 | 2022-05-17 14:00 | 43 | 0d | must start on 2022-05-17 09:00 |
| 43 |  | 按照《需求调研计划》进行调研，形成调研记录 | 2d | 2022-05-13 09:00 | 2022-05-17 09:00 | 38 | 0d | must start on 2022-05-13 09:00 |
| 42 |  | 需求调研 | 2.5d | 2022-05-13 09:00 | 2022-05-17 14:00 |  | 0d |  |
| 41 | 1.11 | **需求开发** | 29.38d | 2022-05-13 09:00 | 2022-06-23 12:00 |  | 0d |  |
| 40 | 1.11.1 | **项目经理根据里程碑数据进行阶段性调整** | 0.25d | 2022-05-12 16:00 | 2022-05-13 09:00 | 39 | 0d | must start on 2022-05-12 16:00 |
| 39 |  | 开策划里程碑会议,填写《策划里程碑状态报告》 | 0.25d | 2022-05-12 11:30 | 2022-05-12 14:30 | 30 | 0d | must start on 2022-05-12 11:30 |
| 38 | 1.11.2 | **项目计划里程碑** | 0.69d | 2022-05-12 11:30 | 2022-05-13 09:00 |  | 0d |  |
| 37 |  | 编写培训反馈记录 | 1d | 2022-05-06 13:00 | 2022-05-09 12:00 | 36 | 0d | must start on 2022-05-06 13:00 |
| 36 |  | 依据《项目培训计划》组织培训 | 0.5d | 2022-05-06 08:00 | 2022-05-06 12:00 | 25 | 0d | must start on 2022-05-06 08:00 |
| 35 | 1.11.3 | **召开项目培训** | 1.5d | 2022-05-06 08:00 | 2022-05-09 12:00 |  | 0d |  |
| 34 |  | 填写计划基线《发布报告》 | 0.5d | 2022-05-11 16:30 | 2022-05-12 11:30 | 33 | 0d | must start on 2022-05-11 16:30 |
| 33 |  | 配置管理在配置库中建立计划基线 | 0.5d | 2022-05-11 11:30 | 2022-05-11 16:30 | 32 | 0d | must start on 2022-05-11 11:30 |
| 32 |  | QA和CM对配置库进行功能审计和物理审计 | 0.5d | 2022-05-10 16:30 | 2022-05-11 11:30 | 31 | 0d | must start on 2022-05-10 16:30 |
| 31 |  | 计划基线建立申请,填写《基线建立申请》 | 0.5d | 2022-05-10 11:00 | 2022-05-10 16:00 | 29 | 0d | must start on 2022-05-10 11:00 |
| 30 | 1.11.4 | **建立计划基线** | 2.06d | 2022-05-10 11:00 | 2022-05-12 11:30 | 20 | 0d |  |
| 29 |  | 调研计划发给客户 | 1d | 2022-05-09 11:00 | 2022-05-10 11:00 | 28 | 0d | must start on 2022-05-09 11:00 |
| 28 |  | 项目计划书的评审与发布 | 1d | 2022-05-06 11:00 | 2022-05-09 11:00 | 27 | 0d | must start on 2022-05-06 11:00 |
| 27 |  | 评审中发现的缺陷进行修正 | 1d | 2022-05-05 10:15 | 2022-05-06 10:15 | 26 | 0d | must start on 2022-05-05 10:15 |
| 26 | 1.11.4.4 | **项目计划书,从属计划及项目定义过程进行评审** | 1d | 2022-05-04 09:00 | 2022-05-05 09:00 | 16 | 0d | must start on 2022-05-04 09:00 |
| 25 |  | 编写<培训计划> | 1d | 2022-05-05 08:00 | 2022-05-05 17:00 |  | 0d | must start on 2022-05-05 08:00 |
| 24 |  | 编写测试计划 | 1d | 2022-05-05 08:00 | 2022-05-05 17:00 |  | 0d | must start on 2022-05-05 08:00 |
| 23 |  | 完善配置管理计划(CM) | 1d | 2022-05-05 08:00 | 2022-05-05 17:00 |  | 0d | must start on 2022-05-05 08:00 |
| 22 |  | 完善质量保证计划(QA) | 1d | 2022-05-05 08:00 | 2022-05-05 17:00 |  | 0d | must start on 2022-05-05 08:00 |
| 21 |  | 编写需求调研计划 | 1d | 2022-05-05 08:00 | 2022-05-05 17:00 |  | 0d | must start on 2022-05-05 08:00 |
| 20 | 1.11.4.5 | **制定从属计划** | 1d | 2022-05-05 08:00 | 2022-05-05 17:00 |  | 0d |  |
| 19 |  | 编写<度量计划> | 0.94d | 2022-05-03 09:30 | 2022-05-04 09:00 | 18 | 0d | must start on 2022-05-03 09:30 |
| 18 |  | 编写《项目计划书》 | 4.16d | 2022-04-27 08:00 | 2022-05-03 09:15 | 17 | 0d | must start on 2022-04-27 08:00 |
| 17 |  | 完善项目进度计划 | 1d | 2022-04-26 08:00 | 2022-04-26 17:00 | 14 | 0d | must start on 2022-04-26 08:00 |
| 16 |  | 项目经理制定项目计划 | 6.12d | 2022-04-26 08:00 | 2022-05-04 09:00 |  | 0d |  |
| 15 | 1.11.5 | **项目计划** | 10.38d | 2022-04-26 08:00 | 2022-05-10 11:00 |  | 0d |  |
| 14 |  | 依据<风险检查表>进行风险识别,初步形成计划 | 0.5d | 2022-04-25 09:15 | 2022-04-25 14:15 | 13 | 0d | must start on 2022-04-25 09:15 |
| 13 |  | 估算项目的规模,工作量,成本,形成进度计划<项目估算>和项目预算 | 1d | 2022-04-22 08:30 | 2022-04-25 08:30 | 12 | 0d | must start on 2022-04-22 08:30 |
| 12 |  | 根据初步，进行WBS分解 | 1d | 2022-04-21 08:15 | 2022-04-22 08:15 | 11 | 0d | must start on 2022-04-21 08:15 |
| 11 |  | EPG指导项目经理编写《项目定义过程》 | 0.5d | 2022-04-20 11:15 | 2022-04-20 16:15 | 10 | 0d | must start on 2022-04-20 11:15 |
| 10 |  | 确定软件生存周期,初步制定QA,CM计划 | 1.67d | 2022-04-18 14:30 | 2022-04-20 10:50 | 7 | 0d | must start on 2022-04-18 14:30 |
| 9 |  | 项目估算 | 4.97d | 2022-04-18 14:30 | 2022-04-25 14:15 |  | 0d |  |
| 8 | 1.12 | **项目计划** | 18.44d | 2022-04-18 14:30 | 2022-05-13 09:00 |  | 0d |  |
| 7 |  | 编写《项目立项报告》 | 0.5d | 2022-04-18 09:30 | 2022-04-18 14:30 |  | 0d | must start on 2022-04-18 09:30 |
| 6 |  | 召开项目立项会议 | 0.28d | 2022-04-26 16:00 | 2022-04-27 09:15 | 5 | 0d | must start on 2022-04-26 16:00 |
| 5 |  | 项目组织架构，章程制定、资源、职责，干系人RACI整理 | 0.25d | 2022-04-26 13:30 | 2022-04-26 15:30 | 4 | 0d | must start on 2022-04-26 13:30 |
| 4 |  | 项目初步估算 | 0.25d | 2022-04-26 10:00 | 2022-04-26 12:00 | 3 | 0d | must start on 2022-04-26 10:00 |
| 3 |  | 了解项目情况,获得初步需求 | 3d | 2022-04-08 08:00 | 2022-04-12 17:00 |  | 0d | must start on 2022-04-08 08:00 |

| ID | Task | Duration | Start | Finish | Total float |
| --- | --- | --- | --- | --- | --- |
| 2 | 项目立项 | 13.16d | 2022-04-08 08:00 | 2022-04-27 09:15 | 0d |
| 1 | 赛事运营支持系统 | 311.5d | 2022-04-08 08:00 | 2023-06-19 12:00 | 0d |

## Version 2 (data date 2019-01-01, saved 2023-10-30)

Last finish 2023-06-19 → 2023-08-14 (+56d).

Added:

| ID | Task | Duration | Start | Finish | Predecessors | Constraint | Resources |
| --- | --- | --- | --- | --- | --- | --- | --- |
| 1 | **赛事运营支持系统** | 293d? | 2022-06-30 08:00 | 2023-08-14 17:00 |  |  |  |
| 2 | **项目立项** | 2d | 2023-04-07 08:00 | 2023-04-10 17:00 |  |  |  |
| 10 | **项目估算** | 4d | 2023-04-11 08:00 | 2023-04-14 17:00 |  |  |  |
| 17 | **项目经理制定项目计划** | 4d | 2023-04-17 08:00 | 2023-04-20 17:00 |  |  |  |
| 27 | 项目计划书,从属计划及项目定义过程进行评审 | 1d | 2023-04-21 08:00 | 2023-04-21 17:00 | 21, 17 |  | 配置管理; 测试; 项目经理; 需求; 设计; 高级编码 |
| 41 | 项目经理根据里程碑数据进行阶段性调整 | 0.25d | 2023-05-01 10:00 | 2023-05-01 12:00 | 40 |  | 项目经理 |
| 44 | **需求调研** | 1.5d | 2023-05-01 13:00 | 2023-05-02 17:00 |  |  |  |
| 68 | 项目经理对项目计划进行阶段性调整，完善《需求跟踪矩阵》 | 0.25d | 2023-05-18 10:00 | 2023-05-18 12:00 | 67 |  | 项目经理 |
| 71 | **决策分析** | 1.25d | 2023-05-18 13:00 | 2023-05-19 15:00 |  |  |  |
| 85 | 编写<交付件一览表>初稿 | 1d | 2023-06-01 08:00 | 2023-06-01 17:00 | 78 |  | 设计 |
| 90 | **建立设计基线** | 2d | 2023-06-01 08:00 | 2023-06-02 17:00 |  |  |  |
| 97 | 项目经理对项目计划进行阶段性调整，完善《需求跟踪矩阵》 | 0.25d | 2023-06-05 10:00 | 2023-06-05 12:00 | 96 |  | 项目经理 |
| 100 | **编码** | 17d | 2023-06-07 13:00 | 2023-06-30 12:00 |  |  |  |
| 101 | 运营管理系统升级 | 6d | 2023-06-07 13:00 | 2023-06-15 12:00 | 81 | start no earlier than 2023-06-05 08:00 | 高级编码; 架构师 |
| 102 | 业务协作门户升级 | 7d | 2023-06-07 13:00 | 2023-06-16 12:00 | 81 |  | 高级编码; 编码 |
| 103 | 移动端监控应用系统建设 | 11d | 2023-06-15 13:00 | 2023-06-30 12:00 | 101 |  | 编码; 设计; 架构师 |
| 133 | 项目经理对项目计划进行阶段性调整，完善《需求跟踪矩阵》 | 0.25d | 2023-07-13 15:00 | 2023-07-13 17:00 | 132 |  | 项目经理 |
| 136 | **系统测试** | 10.5d | 2023-07-07 13:00 | 2023-07-21 17:00 |  |  |  |
| 150 | 项目经理对项目计划进行阶段性调整 | 0.25d | 2023-07-26 10:00 | 2023-07-26 12:00 | 149 |  | 项目经理 |
| 153 | **试运行** | 3.5d | 2023-07-26 13:00 | 2023-07-31 17:00 |  |  |  |
| 174 | 必要时对相关计划进行相应调整 | 0.25d | 2023-08-10 15:00 | 2023-08-10 17:00 | 173 |  | 项目经理 |

Removed: 212 项目周例会跟踪风险和度量 15; 211 项目周例会跟踪风险和度量 14; 210 项目周例会跟踪风险和度量 13; 209 项目周例会跟踪风险和度量 12; 208 项目周例会跟踪风险和度量 11; 196 周期性质量保证活动 6; 184 配置管理 6; 183 配置管理 5; 171 必要时对相关计划进行相应调整; 150 试运行; 148 项目经理对项目计划进行阶段性调整; 134 系统测试; 132 项目经理对项目计划进行阶段性调整，完善《需求跟踪矩阵》; 102 选手管理&系统配置管理; 101 排班统计; 100 消息通知&公告管理; 99 赛事管理&排班管理; 98 账号管理&裁判管理; 97 认证登录&个人中心; 96 编码; 94 项目经理对项目计划进行阶段性调整，完善《需求跟踪矩阵》; 87 建立设计基线; 82 编写<交付件一览表>初稿; 68 决策分析; 66 项目经理对项目计划进行阶段性调整，完善《需求跟踪矩阵》; 42 需求调研; 40 项目经理根据里程碑数据进行阶段性调整; 26 项目计划书,从属计划及项目定义过程进行评审; 16 项目经理制定项目计划; 9 项目估算; 2 项目立项; 1 赛事运营支持系统

Changed:

| ID | Task | Start | Finish | Duration | Total float | Predecessors | Other |
| --- | --- | --- | --- | --- | --- | --- | --- |
| 3 | 了解项目情况,获得初步需求 | 2022-04-08 08:00 → 2023-04-07 08:00 (+364d) | 2022-04-12 17:00 → 2023-04-07 17:00 (+360d) | 3d → 1d |  |  | constraint must start on 2022-04-08 08:00 → start no earlier than 2023-04-07 08:00; resources 高级设计; 项目经理; 测试; 高级编码 → 项目经理; 高级设计; 测试; 高级编码; baseline start none → 2008-06-20 08:00; baseline finish none → 2008-06-20 17:00 |
| 4 | 项目初步估算 | 2022-04-26 10:00 → 2023-04-10 08:00 (+349d) | 2022-04-26 12:00 → 2023-04-10 10:00 (+349d) |  |  |  | constraint must start on 2022-04-26 10:00 → none; resources 高级编码; 高级测试; 高级设计; 项目经理 → 项目经理; 高级编码; 高级测试; 高级设计; baseline start none → 2008-06-23 08:00; baseline finish none → 2008-06-23 17:00 |
| 5 | 项目组织架构，章程制定、资源、职责，干系人RACI整理 | 2022-04-26 13:30 → 2023-04-10 10:00 (+349d) | 2022-04-26 15:30 → 2023-04-10 12:00 (+349d) |  |  |  | constraint must start on 2022-04-26 13:30 → none; baseline start none → 2008-06-25 08:00; baseline finish none → 2008-06-25 17:00 |
| 6 | 召开项目立项会议 | 2022-04-26 16:00 → 2023-04-10 13:00 (+349d) | 2022-04-27 09:15 → 2023-04-10 15:00 (+348d) | 0.28d → 0.25d | 0d → 90.25d |  | constraint must start on 2022-04-26 16:00 → none; resources 高级编码; 设计; 需求; 测试; 配置管理; 项目经理 → 项目经理; 设计; 需求; 测试; 配置管理; 高级编码; baseline start none → 2008-06-27 08:00; baseline finish none → 2008-06-27 17:00 |
| 7 | 编写《项目立项报告》 | 2022-04-18 09:30 → 2023-04-10 13:00 (+357d) | 2022-04-18 14:30 → 2023-04-10 17:00 (+357d) |  |  | none → 5 | constraint must start on 2022-04-18 09:30 → none |
| 9 | **项目计划** | 2022-04-26 08:00 → 2023-04-11 08:00 (+350d) | 2022-05-10 11:00 → 2023-05-01 12:00 (+356d) | 10.38d → 14.5d |  |  | baseline start none → 2008-07-01 08:00; baseline finish none → 2008-08-13 17:00 |
| 11 | 确定软件生存周期,初步制定QA,CM计划 | 2022-04-18 14:30 → 2023-04-11 08:00 (+358d) | 2022-04-20 10:50 → 2023-04-11 17:00 (+356d) | 1.67d → 1d |  |  | constraint must start on 2022-04-18 14:30 → none; baseline start none → 2008-07-01 08:00; baseline finish none → 2008-07-01 17:00 |
| 12 | EPG指导项目经理编写《项目定义过程》 | 2022-04-20 11:15 → 2023-04-12 08:00 (+357d) | 2022-04-20 16:15 → 2023-04-12 12:00 (+357d) |  |  |  | constraint must start on 2022-04-20 11:15 → none; baseline start none → 2008-07-02 08:00; baseline finish none → 2008-07-02 17:00 |
| 13 | 根据初步，进行WBS分解 | 2022-04-21 08:15 → 2023-04-12 13:00 (+356d) | 2022-04-22 08:15 → 2023-04-13 12:00 (+356d) |  |  |  | constraint must start on 2022-04-21 08:15 → none; resources 高级编码; 设计; 项目经理 → 项目经理; 高级编码; 设计 |
| 14 | 估算项目的规模,工作量,成本,形成进度计划<项目估算>和项目预算 | 2022-04-22 08:30 → 2023-04-13 13:00 (+356d) | 2022-04-25 08:30 → 2023-04-14 12:00 (+354d) |  |  |  | constraint must start on 2022-04-22 08:30 → none; resources 高级编码; 设计; 项目经理 → 项目经理; 高级编码; 设计 |
| 15 | 依据<风险检查表>进行风险识别,初步形成计划 | 2022-04-25 09:15 → 2023-04-14 13:00 (+354d) | 2022-04-25 14:15 → 2023-04-14 17:00 (+354d) |  |  |  | constraint must start on 2022-04-25 09:15 → none |
| 16 | **项目计划** | 2022-04-18 14:30 → 2023-04-17 08:00 (+364d) | 2022-05-13 09:00 → 2023-04-26 17:00 (+348d) | 18.44d → 8d |  |  | baseline start none → 2008-07-04 08:00; baseline finish none → 2008-08-13 17:00 |
| 18 | 完善项目进度计划 | 2022-04-26 08:00 → 2023-04-17 08:00 (+356d) | 2022-04-26 17:00 → 2023-04-17 17:00 (+356d) |  |  |  | constraint must start on 2022-04-26 08:00 → none; baseline start none → 2008-07-04 08:00; baseline finish none → 2008-07-04 17:00 |
| 19 | 编写《项目计划书》 | 2022-04-27 08:00 → 2023-04-18 08:00 (+356d) | 2022-05-03 09:15 → 2023-04-19 17:00 (+351d) | 4.16d → 2d |  |  | constraint must start on 2022-04-27 08:00 → none; baseline start none → 2008-07-07 08:00; baseline finish none → 2008-07-07 17:00 |
| 20 | 编写<度量计划> | 2022-05-03 09:30 → 2023-04-20 08:00 (+352d) | 2022-05-04 09:00 → 2023-04-20 17:00 (+351d) | 0.94d → 1d |  |  | constraint must start on 2022-05-03 09:30 → none |
| 21 | **制定从属计划** | 2022-05-05 08:00 → 2023-04-17 08:00 (+347d) | 2022-05-05 17:00 → 2023-04-17 17:00 (+347d) |  | 0d → 3d |  | baseline start none → 2008-07-11 08:00; baseline finish none → 2008-07-14 17:00 |
| 22 | 编写需求调研计划 | 2022-05-05 08:00 → 2023-04-17 08:00 (+347d) | 2022-05-05 17:00 → 2023-04-17 17:00 (+347d) |  | 0d → 3d | none → 15 | constraint must start on 2022-05-05 08:00 → none |
| 23 | 完善质量保证计划(QA) | 2022-05-05 08:00 → 2023-04-17 08:00 (+347d) | 2022-05-05 17:00 → 2023-04-17 17:00 (+347d) |  | 0d → 3d | none → 15 | constraint must start on 2022-05-05 08:00 → none |
| 24 | 完善配置管理计划(CM) | 2022-05-05 08:00 → 2023-04-17 08:00 (+347d) | 2022-05-05 17:00 → 2023-04-17 17:00 (+347d) |  | 0d → 3d | none → 15 | constraint must start on 2022-05-05 08:00 → none |
| 25 | 编写测试计划 | 2022-05-05 08:00 → 2023-04-17 08:00 (+347d) | 2022-05-05 17:00 → 2023-04-17 17:00 (+347d) |  | 0d → 3d | none → 15 | constraint must start on 2022-05-05 08:00 → none |
| 26 | 编写<培训计划> | 2022-05-05 08:00 → 2023-04-17 08:00 (+347d) | 2022-05-05 17:00 → 2023-04-17 17:00 (+347d) |  | 0d → 3d | none → 15 | constraint must start on 2022-05-05 08:00 → none |
| 28 | 评审中发现的缺陷进行修正 | 2022-05-05 10:15 → 2023-04-24 08:00 (+354d) | 2022-05-06 10:15 → 2023-04-24 17:00 (+353d) |  |  | 项目计划书,从属计划及项目定义过程进行评审 → 27 | constraint must start on 2022-05-05 10:15 → none; resources 高级编码; 需求; 设计; 测试; 配置管理; EPG; 项目经理 → 需求; 设计; 测试; 配置管理; EPG; 项目经理; 高级编码 |
| 29 | 项目计划书的评审与发布 | 2022-05-06 11:00 → 2023-04-25 08:00 (+354d) | 2022-05-09 11:00 → 2023-04-25 17:00 (+351d) |  |  |  | constraint must start on 2022-05-06 11:00 → none |
| 30 | 调研计划发给客户 | 2022-05-09 11:00 → 2023-04-26 08:00 (+352d) | 2022-05-10 11:00 → 2023-04-26 17:00 (+351d) |  |  |  | constraint must start on 2022-05-09 11:00 → none |
| 31 | **建立计划基线** | 2022-05-10 11:00 → 2023-04-27 08:00 (+352d) | 2022-05-12 11:30 → 2023-04-28 17:00 (+351d) | 2.06d → 2d |  |  | baseline start none → 2008-07-15 08:00; baseline finish none → 2008-07-17 17:00 |
| 32 | 计划基线建立申请,填写《基线建立申请》 | 2022-05-10 11:00 → 2023-04-27 08:00 (+352d) | 2022-05-10 16:00 → 2023-04-27 12:00 (+352d) |  |  |  | constraint must start on 2022-05-10 11:00 → none; baseline start none → 2008-07-15 08:00; baseline finish none → 2008-07-15 17:00 |
| 33 | QA和CM对配置库进行功能审计和物理审计 | 2022-10-17 14:45 → 2023-04-27 13:00 (+192d) | 2022-10-18 09:45 → 2023-04-27 17:00 (+191d) |  |  | 168 → 32 | constraint must start on 2022-10-17 14:45 → none |
| 34 | 配置管理在配置库中建立计划基线 | 2022-05-11 11:30 → 2023-04-28 08:00 (+352d) | 2022-05-11 16:30 → 2023-04-28 12:00 (+352d) |  |  | 169 → 33 | constraint must start on 2022-05-11 11:30 → none; baseline start none → 2008-07-16 08:00; baseline finish none → 2008-07-16 17:00 |
| 35 | 填写计划基线《发布报告》 | 2022-05-11 16:30 → 2023-04-28 13:00 (+352d) | 2022-05-12 11:30 → 2023-04-28 17:00 (+351d) |  |  |  | constraint must start on 2022-05-11 16:30 → none; baseline start none → 2008-07-17 08:00; baseline finish none → 2008-07-17 17:00 |
| 36 | **召开项目培训** | 2022-05-06 08:00 → 2023-04-18 08:00 (+347d) | 2022-05-09 12:00 → 2023-04-19 12:00 (+345d) |  | 0d → 83.5d |  | baseline start none → 2008-07-18 08:00; baseline finish none → 2008-07-21 17:00 |
| 37 | 依据《项目培训计划》组织培训 | 2022-05-06 08:00 → 2023-04-18 08:00 (+347d) | 2022-05-06 12:00 → 2023-04-18 12:00 (+347d) |  | 0d → 83.5d |  | constraint must start on 2022-05-06 08:00 → none; baseline start none → 2008-07-18 08:00; baseline finish none → 2008-07-18 17:00 |
| 38 | 编写培训反馈记录 | 2022-05-06 13:00 → 2023-04-18 13:00 (+347d) | 2022-05-09 12:00 → 2023-04-19 12:00 (+345d) |  | 0d → 83.5d |  | constraint must start on 2022-05-06 13:00 → none; baseline start none → 2008-07-21 08:00; baseline finish none → 2008-07-21 17:00 |
| 39 | **项目计划里程碑** | 2022-05-12 11:30 → 2023-05-01 08:00 (+354d) | 2022-05-13 09:00 → 2023-05-01 12:00 (+353d) | 0.69d → 0.5d |  |  | baseline start none → 2008-07-18 08:00; baseline finish none → 2008-07-23 17:00 |
| 40 | 开策划里程碑会议,填写《策划里程碑状态报告》 | 2022-05-12 11:30 → 2023-05-01 08:00 (+354d) | 2022-05-12 14:30 → 2023-05-01 10:00 (+354d) |  |  |  | constraint must start on 2022-05-12 11:30 → none; resources 高级编码; 项目经理; 需求; 设计; 测试; 配置管理 → 项目经理; 需求; 设计; 测试; 配置管理; 高级编码; baseline start none → 2008-07-18 08:00; baseline finish none → 2008-07-18 17:00 |
| 43 | **需求开发** | 2022-05-13 09:00 → 2023-05-01 13:00 (+353d) | 2022-06-23 12:00 → 2023-05-18 12:00 (+329d) | 29.38d → 13d |  |  | baseline start none → 2008-07-18 08:00; baseline finish none → 2008-08-14 09:36 |
| 45 | 按照《需求调研计划》进行调研，形成调研记录 | 2022-05-13 09:00 → 2023-05-01 13:00 (+353d) | 2022-05-17 09:00 → 2023-05-02 12:00 (+350d) | 2d → 1d |  |  | constraint must start on 2022-05-13 09:00 → none; baseline start none → 2008-07-18 08:00; baseline finish none → 2008-07-18 17:00 |
| 46 | 编写《需求跟踪矩阵》填写原始需求 | 2022-05-17 09:00 → 2023-05-02 13:00 (+350d) | 2022-05-17 14:00 → 2023-05-02 17:00 (+350d) |  |  |  | constraint must start on 2022-05-17 09:00 → none; baseline start none → 2008-07-22 08:00; baseline finish none → 2008-07-22 17:00 |
| 47 | **需求分析** | 2022-05-17 11:00 → 2023-05-03 08:00 (+351d) | 2022-06-17 08:15 → 2023-05-16 12:00 (+333d) | 22.66d → 9.5d |  | 需求调研 → 44 | baseline start none → 2008-07-24 08:00; baseline finish none → 2008-07-30 17:00 |
| 48 | 分析需求,编写《用户需求说明书》 | 2022-05-17 11:00 → 2023-05-03 08:00 (+351d) | 2022-05-24 11:00 → 2023-05-04 17:00 (+345d) | 5d → 2d |  |  | constraint must start on 2022-05-17 11:00 → none; baseline start none → 2008-07-24 08:00; baseline finish none → 2008-07-24 17:00 |
| 49 | 评审<用户需求说明书>,记录并修改缺陷 | 2022-05-24 11:45 → 2023-05-05 08:00 (+346d) | 2022-05-24 16:45 → 2023-05-05 12:00 (+346d) |  |  |  | constraint must start on 2022-05-24 11:45 → none; resources 高级编码; 项目经理; 需求; 设计; 测试; 配置管理 → 项目经理; 需求; 设计; 测试; 配置管理; 高级编码 |
| 50 | QA检查<用户需求说明书>并记录不符合项并修改 | 2022-05-24 16:45 → 2023-05-05 13:00 (+346d) | 2022-05-25 11:45 → 2023-05-05 17:00 (+345d) |  |  |  | constraint must start on 2022-05-24 16:45 → none |
| 51 | <用户需求说明书>提交客户确认 | 2022-05-25 11:45 → 2023-05-08 08:00 (+348d) | 2022-05-25 16:45 → 2023-05-08 12:00 (+348d) |  |  |  | constraint must start on 2022-05-25 11:45 → none |
| 52 | 编写《产品需求说明书》 | 2022-05-25 16:45 → 2023-05-08 13:00 (+348d) | 2022-06-02 16:45 → 2023-05-10 12:00 (+342d) | 6d → 2d |  |  | constraint must start on 2022-05-25 16:45 → none; baseline start none → 2008-07-28 08:00; baseline finish none → 2008-07-28 17:00 |
| 53 | 评审<产品需求说明书>,记录并修改缺陷 | 2022-06-02 16:45 → 2023-05-10 13:00 (+342d) | 2022-06-03 11:45 → 2023-05-10 17:00 (+341d) |  |  |  | constraint must start on 2022-06-02 16:45 → none; resources 高级编码; 项目经理; 需求; 设计; 测试; 配置管理 → 项目经理; 需求; 设计; 测试; 配置管理; 高级编码 |
| 54 | 完善<项目估算>和《需求跟踪矩阵》 | 2022-06-03 13:45 → 2023-05-11 08:00 (+342d) | 2022-06-06 13:45 → 2023-05-11 17:00 (+339d) |  | 0d → 2d |  | constraint must start on 2022-06-03 13:45 → none |
| 55 | 完善编写《测试计划》 | 2022-06-06 13:45 → 2023-05-12 08:00 (+340d) | 2022-06-08 13:45 → 2023-05-12 12:00 (+338d) | 2d → 0.5d | 0d → 2d |  | constraint must start on 2022-06-06 13:45 → none |
| 56 | 评审《测试计划》并发布 | 2022-06-08 13:45 → 2023-05-12 13:00 (+338d) | 2022-06-09 13:45 → 2023-05-15 12:00 (+340d) |  | 0d → 2d |  | constraint must start on 2022-06-08 13:45 → none |
| 57 | 完善<项目进度计划>，完善<项目计划书> | 2022-06-09 13:45 → 2023-05-15 13:00 (+340d) | 2022-06-10 13:45 → 2023-05-16 12:00 (+340d) |  | 0d → 2d |  | constraint must start on 2022-06-09 13:45 → none |
| 58 | 依据《产品需求说明书》编写《系统测试用例》 | 2022-06-09 08:00 → 2023-05-11 08:00 (+336d) | 2022-06-10 17:00 → 2023-05-11 17:00 (+335d) | 2d → 1d |  | none → 53 | constraint must start on 2022-06-09 08:00 → none; resources 需求; 测试; 项目经理 → 项目经理; 需求; 测试; baseline start none → 2008-07-29 08:00; baseline finish none → 2008-07-29 17:00 |
| 59 | QA检查《产品需求说明书》和《系统测试用例》 | 2022-06-15 08:00 → 2023-05-12 08:00 (+331d) | 2022-06-15 17:00 → 2023-05-12 17:00 (+331d) |  |  |  | constraint must start on 2022-06-15 08:00 → none; resources 质量保证; 需求; 测试 → 需求; 测试; 质量保证; baseline start none → 2008-07-30 08:00; baseline finish none → 2008-07-30 17:00 |
| 60 | 评审<系统测试用例>记录并修改缺陷 | 2022-06-16 08:15 → 2023-05-15 08:00 (+333d) | 2022-06-17 08:15 → 2023-05-15 17:00 (+332d) |  |  |  | constraint must start on 2022-06-16 08:15 → none; resources 高级编码; 项目经理; 需求; 设计; 测试; 配置管理 → 项目经理; 需求; 设计; 测试; 配置管理; 高级编码 |
| 61 | **建立需求基线** | 2022-06-19 08:00 → 2023-05-16 08:00 (+331d) | 2022-06-22 17:00 → 2023-05-17 17:00 (+329d) | 3d → 2d |  |  | baseline start none → 2008-08-07 08:00; baseline finish none → 2008-08-11 09:36 |
| 62 | 需求基线建立申请,填写《基线建立申请》 | 2022-06-19 08:00 → 2023-05-16 08:00 (+331d) | 2022-06-20 12:00 → 2023-05-16 12:00 (+330d) |  |  |  | constraint must start on 2022-06-19 08:00 → none; baseline start none → 2008-08-07 08:00; baseline finish none → 2008-08-07 17:00 |
| 63 | QA和CM对配置库进行功能和物理审计 | 2022-06-20 13:00 → 2023-05-16 13:00 (+330d) | 2022-06-20 17:00 → 2023-05-16 17:00 (+330d) |  |  |  | constraint must start on 2022-06-20 13:00 → none; resources 质量保证; 配置管理 → 配置管理; 质量保证 |
| 64 | 配置管理在配置库中建立需求基线 | 2022-06-22 08:00 → 2023-05-17 08:00 (+329d) | 2022-06-22 12:00 → 2023-05-17 12:00 (+329d) |  |  |  | constraint must start on 2022-06-22 08:00 → none; baseline start none → 2008-08-08 08:00; baseline finish none → 2008-08-08 17:00 |
| 65 | 填写需求基线《发布报告》 | 2022-06-22 13:00 → 2023-05-17 13:00 (+329d) | 2022-06-22 17:00 → 2023-05-17 17:00 (+329d) |  |  |  | constraint must start on 2022-06-22 13:00 → none; baseline start none → 2008-08-11 08:00; baseline finish none → 2008-08-11 09:36 |
| 66 | **需求里程碑** | 2022-06-23 08:00 → 2023-05-18 08:00 (+329d) | 2022-06-23 12:00 → 2023-05-18 12:00 (+329d) |  |  |  | baseline start none → 2008-08-11 09:36; baseline finish none → 2008-08-14 09:36 |
| 67 | 需求里程碑会议,填写《需求里程碑状态报告》 | 2022-06-23 08:00 → 2023-05-18 08:00 (+329d) | 2022-06-23 10:00 → 2023-05-18 10:00 (+329d) |  |  |  | constraint must start on 2022-06-23 08:00 → none; baseline start none → 2008-08-11 09:36; baseline finish none → 2008-08-12 09:36 |
| 70 | **系统设计** | 2022-06-18 13:00 → 2023-05-18 13:00 (+334d) | 2022-07-27 12:00 → 2023-06-07 12:00 (+315d) | 27.5d → 14d? |  |  | baseline start none → 2008-08-11 09:36; baseline finish none → 2008-08-21 14:36 |
| 72 | 完善技术方案,必要情况进行决策分析形成《决策分析报告》 | 2022-06-18 13:00 → 2023-05-18 13:00 (+334d) | 2022-06-20 17:00 → 2023-05-19 12:00 (+333d) |  |  | none → 65 | constraint must start on 2022-06-18 13:00 → none; resources 高级编码; 设计; 项目经理; 需求 → 设计; 项目经理; 需求; 高级编码; baseline start none → 2008-08-11 09:36; baseline finish none → 2008-08-11 14:36 |
| 73 | 技术解决方案制定，购买复用分析 | 2022-06-23 13:00 → 2023-05-19 13:00 (+330d) | 2022-06-24 12:00 → 2023-05-19 15:00 (+329d) | 1d → 0.25d |  |  | constraint must start on 2022-06-23 13:00 → none |
| 74 | **系统概要设计** | 2022-06-24 13:00 → 2023-05-19 15:00 (+329d) | 2022-07-04 17:00 → 2023-05-24 17:00 (+324d) | 6.5d → 3.25d | 0d → 0.25d | 决策分析 → 71 | baseline start none → 2008-08-12 14:36; baseline finish none → 2008-08-21 14:36 |
| 75 | 进行总体设计,编写《概要设计书》 | 2022-06-25 13:00 → 2023-05-22 08:00 (+331d) | 2022-07-01 17:00 → 2023-05-23 17:00 (+326d) | 5d → 2d |  |  | constraint must start on 2022-06-25 13:00 → none; baseline start none → 2008-08-12 14:36; baseline finish none → 2008-08-13 14:36 |
| 76 | 评审<概要设计>,记录缺陷并修正 | 2022-07-04 08:00 → 2023-05-24 08:00 (+324d) | 2022-07-04 17:00 → 2023-05-24 17:00 (+324d) |  |  |  | constraint must start on 2022-07-04 08:00 → none; baseline start none → 2008-08-13 14:36; baseline finish none → 2008-08-14 14:36 |
| 77 | 数据库初步设计 | 2022-06-24 13:00 → 2023-05-19 15:00 (+329d) | 2022-06-27 12:00 → 2023-05-22 15:00 (+329d) |  | 0d → 11.75d |  | constraint must start on 2022-06-24 13:00 → none |
| 78 | **系统详细设计** | 2022-07-02 13:00 → 2023-05-25 08:00 (+327d) | 2022-07-18 17:00 → 2023-05-31 17:00 (+317d) | 11d → 5d? |  |  | baseline start none → 2008-08-25 09:36; baseline finish none → 2008-08-29 09:36 |
| 79 | 依据《概要设计说明书》编写《详细设计说明书》 | 2022-07-05 13:00 → 2023-05-25 08:00 (+324d) | 2022-07-12 12:00 → 2023-05-29 17:00 (+321d) | 5d → 3d |  |  | constraint must start on 2022-07-05 13:00 → none; baseline start none → 2008-08-25 09:36; baseline finish none → 2008-08-26 09:36 |
| 80 | 评审<详细设计>,记录缺陷并修正 | 2022-07-12 13:00 → 2023-05-30 08:00 (+322d) | 2022-07-13 12:00 → 2023-05-30 17:00 (+321d) |  |  |  | constraint must start on 2022-07-12 13:00 → none; resources 项目经理; 设计; 需求; 架构师; 编码 → 项目经理; 设计; 需求; 编码; 架构师; baseline start none → 2008-08-26 09:36; baseline finish none → 2008-08-27 09:36 |
| 81 | QA检查<详细设计>记录不符合项并修正 | 2022-07-13 13:00 → 2023-05-31 08:00 (+322d) | 2022-07-14 12:00 → 2023-05-31 17:00 (+321d) |  |  |  | constraint must start on 2022-07-13 13:00 → none |
| 82 | 完善《需求跟踪矩阵》 | 2022-07-05 13:00 → 2023-05-25 08:00 (+324d) | 2022-07-06 12:00 → 2023-05-25 17:00 (+323d) | 1d → 1d? | 0d → 4d |  | constraint must start on 2022-07-05 13:00 → none |

| ID | Task | Start | Finish | Duration | Total float | Predecessors | Other |
| --- | --- | --- | --- | --- | --- | --- | --- |
| 83 | 依据《详细设计说明书》编制《单元测试计划》 | 2022-07-16 08:00 → 2023-05-31 08:00 (+319d) | 2022-07-18 17:00 → 2023-05-31 17:00 (+317d) |  |  |  | constraint must start on 2022-07-16 08:00 → start no earlier than 2023-05-31 08:00 |
| 84 | 依据《详细设计说明书》《单元测试计划》编制《单元测试用例》 | 2022-07-02 13:00 → 2023-05-25 08:00 (+327d) | 2022-07-04 17:00 → 2023-05-25 17:00 (+325d) |  | 0d → 4d |  | constraint must start on 2022-07-02 13:00 → none |
| 86 | 编写<用户操作手册>初稿 | 2022-07-21 08:00 → 2023-06-02 08:00 (+316d) | 2022-07-22 17:00 → 2023-06-02 17:00 (+315d) | 2d → 1d |  | 编写<交付件一览表>初稿 → 85 | constraint must start on 2022-07-21 08:00 → none |
| 87 | 编写<接口列表> | 2022-07-23 08:00 → 2023-06-05 08:00 (+317d) | 2022-07-25 12:00 → 2023-06-05 12:00 (+315d) |  |  |  | constraint must start on 2022-07-23 08:00 → none |
| 88 | 编写<接口定义书> | 2022-07-25 13:00 → 2023-06-05 13:00 (+315d) | 2022-07-26 12:00 → 2023-06-06 12:00 (+315d) |  |  |  | constraint must start on 2022-07-25 13:00 → none |
| 89 | 编写<产品集成计划> | 2022-07-26 13:00 → 2023-06-06 13:00 (+315d) | 2022-07-27 12:00 → 2023-06-07 12:00 (+315d) |  |  |  | constraint must start on 2022-07-26 13:00 → none |
| 91 | 设计基线建立申请,填写《基线建立申请》 | 2022-07-20 08:00 → 2023-06-01 08:00 (+316d) | 2022-07-20 12:00 → 2023-06-01 12:00 (+316d) |  | 0d → 2d |  | constraint must start on 2022-07-20 08:00 → none; baseline start none → 2008-08-29 09:36; baseline finish none → 2008-09-01 09:36 |
| 92 | QA和CM对配置库进行功能审计 | 2022-07-20 13:00 → 2023-06-01 13:00 (+316d) | 2022-07-20 17:00 → 2023-06-01 17:00 (+316d) |  | 0d → 2d |  | constraint must start on 2022-07-20 13:00 → none; resources 质量保证; 配置管理 → 配置管理; 质量保证 |
| 93 | 配置管理在配置库中建立设计基线 | 2022-07-21 08:00 → 2023-06-02 08:00 (+316d) | 2022-07-21 12:00 → 2023-06-02 12:00 (+316d) |  | 0d → 2d |  | constraint must start on 2022-07-21 08:00 → none; baseline start none → 2008-08-29 09:36; baseline finish none → 2008-09-01 09:36 |
| 94 | 填写设计基线《发布报告》 | 2022-07-21 13:00 → 2023-06-02 13:00 (+316d) | 2022-07-21 17:00 → 2023-06-02 17:00 (+316d) |  | 0d → 2d |  | constraint must start on 2022-07-21 13:00 → none; baseline start none → 2008-08-29 09:36; baseline finish none → 2008-08-29 09:36 |
| 95 | **设计里程碑** | 2022-07-22 08:00 → 2023-06-05 08:00 (+318d) | 2022-07-22 12:00 → 2023-06-05 12:00 (+318d) |  | 0d → 2d |  | baseline start none → 2008-09-01 09:36; baseline finish none → 2008-09-03 09:36 |
| 96 | 召开设计里程碑评审会议,填写《设计里程碑状态报告》 | 2022-07-22 08:00 → 2023-06-05 08:00 (+318d) | 2022-07-22 10:00 → 2023-06-05 10:00 (+318d) |  | 0d → 2d |  | constraint must start on 2022-07-22 08:00 → none; resources 高级编码; 项目经理; 配置管理; 质量保证; 设计; 需求; 测试 → 项目经理; 设计; 需求; 测试; 高级编码; 配置管理; 质量保证; baseline start none → 2008-09-01 09:36; baseline finish none → 2008-09-02 09:36 |
| 99 | **系统编码实现** | 2022-07-14 13:00 → 2023-06-07 13:00 (+328d) | 2022-09-30 10:45 → 2023-07-13 17:00 (+286d) | 55.84d → 26.5d |  | none → 70 | baseline start none → 2008-09-01 09:36; baseline finish none → 2009-03-02 14:36 |
| 104 | **代码审查（编码期间完善，日期为截止日期）** | 2022-09-05 13:00 → 2023-06-30 13:00 (+298d) | 2022-09-08 17:00 → 2023-07-04 12:00 (+299d) | 3.5d → 2d | 0d → 28.5d |  |  |
| 105 | 完善<产品集成计划>（编码期间完善） | 2022-09-05 13:00 → 2023-06-30 13:00 (+298d) | 2022-09-06 12:00 → 2023-06-30 17:00 (+297d) | 1d → 0.5d | 0d → 28.5d | 选手管理&系统配置管理 → 103 | constraint must start on 2022-09-05 13:00 → none |
| 106 | 完善<单元测试计划>（编码期间完善） | 2022-09-06 13:00 → 2023-07-03 08:00 (+300d) | 2022-09-07 12:00 → 2023-07-03 12:00 (+299d) | 1d → 0.5d | 0d → 28.5d |  | constraint must start on 2022-09-06 13:00 → none |
| 107 | 核心代码交叉走查（编码期间完善） | 2022-09-07 13:00 → 2023-07-03 13:00 (+299d) | 2022-09-07 17:00 → 2023-07-03 17:00 (+299d) |  | 0d → 28.5d |  | constraint must start on 2022-09-07 13:00 → none; baseline start none → 2008-09-04 09:36; baseline finish none → 2008-09-04 11:36 |
| 108 | 完善单元测试用例（编码期间完善） | 2022-09-08 08:00 → 2023-07-04 08:00 (+299d) | 2022-09-08 17:00 → 2023-07-04 12:00 (+299d) | 1d → 0.5d | 0d → 28.5d | none → 107 | constraint must start on 2022-09-08 08:00 → none |
| 109 | **编写单元测试用例（编码期间完善，日期为截止日期）** | 2022-09-09 08:15 → 2023-07-04 13:00 (+298d) | 2022-09-13 08:15 → 2023-07-05 12:00 (+295d) | 2d → 1d | 0d → 28.5d |  |  |
| 110 | 评审＜单元测试用例＞，记录缺陷并修正 | 2022-09-09 08:15 → 2023-07-04 13:00 (+298d) | 2022-09-12 08:15 → 2023-07-04 17:00 (+295d) | 1d → 0.5d | 0d → 28.5d |  | constraint must start on 2022-09-09 08:15 → none |
| 111 | QA检查＜单元测试用例＞记录不符合项并修正 | 2022-09-12 08:15 → 2023-07-05 08:00 (+296d) | 2022-09-13 08:15 → 2023-07-05 12:00 (+295d) | 1d → 0.5d | 0d → 28.5d |  | constraint must start on 2022-09-12 08:15 → none |
| 112 | **执行单元测试** | 2022-09-05 13:00 → 2023-06-30 13:00 (+298d) | 2022-09-15 16:30 → 2023-07-06 17:00 (+294d) | 8.44d → 4.5d |  |  | baseline start none → 2008-09-04 14:36; baseline finish none → 2008-09-12 14:36 |
| 113 | 依据《单元测试用例》执行单元测试 | 2022-09-05 13:00 → 2023-06-30 13:00 (+298d) | 2022-09-12 13:15 → 2023-07-04 12:00 (+295d) | 5.03d → 2d |  | 编码 → 100 | constraint must start on 2022-09-05 13:00 → none; baseline start none → 2008-09-04 14:36; baseline finish none → 2008-09-05 14:36 |
| 114 | 单元测试执行过程中发现的缺陷记录《单元测试BUG记录》 | 2022-09-12 13:15 → 2023-07-04 13:00 (+295d) | 2022-09-13 13:15 → 2023-07-04 17:00 (+294d) | 1d → 0.5d |  |  | constraint must start on 2022-09-12 13:15 → none; baseline start none → 2008-09-09 14:36; baseline finish none → 2008-09-10 14:36 |
| 115 | 编写《单元测试报告》 | 2022-09-13 13:15 → 2023-07-05 08:00 (+295d) | 2022-09-14 13:15 → 2023-07-05 12:00 (+294d) | 1d → 0.5d |  |  | constraint must start on 2022-09-13 13:15 → none; baseline start none → 2008-09-10 14:36; baseline finish none → 2008-09-11 14:36 |
| 116 | QA检查《单元测试报告》和《单元测试BUG记录》 | 2022-09-14 13:15 → 2023-07-05 13:00 (+294d) | 2022-09-15 08:15 → 2023-07-05 17:00 (+293d) |  |  |  | constraint must start on 2022-09-14 13:15 → none; baseline start none → 2008-09-11 14:36; baseline finish none → 2008-09-12 14:36 |
| 117 | 完善<接口定义书> | 2022-09-15 08:30 → 2023-07-06 08:00 (+294d) | 2022-09-15 11:30 → 2023-07-06 12:00 (+294d) | 0.38d → 0.5d |  | 116 → 87, 116 | constraint must start on 2022-09-15 08:30 → none |
| 118 | 接口进行评审 | 2022-09-15 11:30 → 2023-07-06 13:00 (+294d) | 2022-09-15 16:30 → 2023-07-06 17:00 (+294d) |  |  | 117 → 87, 117 | constraint must start on 2022-09-15 11:30 → none |
| 119 | **产品集成** | 2022-09-15 16:30 → 2023-07-07 08:00 (+295d) | 2022-09-23 16:45 → 2023-07-11 17:00 (+291d) | 6.03d → 3d |  |  |  |
| 120 | 搭建集成环境 | 2022-09-15 16:30 → 2023-07-07 08:00 (+295d) | 2022-09-16 16:30 → 2023-07-07 12:00 (+294d) | 1d → 0.5d |  |  | constraint must start on 2022-09-15 16:30 → none |
| 121 | 依据<产品集成检查列表>,<接口列表>进行检查 | 2022-09-19 08:00 → 2023-07-07 13:00 (+291d) | 2022-09-19 17:00 → 2023-07-07 17:00 (+291d) | 1d → 0.5d | 0d → 22d |  | constraint must start on 2022-09-19 08:00 → none |
| 122 | 进行产品集成,模块集成过程中编写<产品集成模块核查报告> | 2022-09-20 08:00 → 2023-07-10 08:00 (+293d) | 2022-09-20 17:00 → 2023-07-10 12:00 (+293d) | 1d → 0.5d | 0d → 22d |  | constraint must start on 2022-09-20 08:00 → none |
| 123 | 准备完毕进行产品集成，进行集成测试 | 2022-09-21 08:00 → 2023-07-10 13:00 (+292d) | 2022-09-21 17:00 → 2023-07-10 17:00 (+292d) | 1d → 0.5d | 0d → 22d |  | constraint must start on 2022-09-21 08:00 → none |
| 124 | 问题修复处理 | 2022-09-22 08:15 → 2023-07-11 08:00 (+292d) | 2022-09-22 17:00 → 2023-07-11 12:00 (+292d) | 0.97d → 0.5d | 0d → 22d |  | constraint must start on 2022-09-22 08:15 → none |
| 125 | 编写《产品集成阶段报告》 | 2022-09-23 08:00 → 2023-07-11 13:00 (+291d) | 2022-09-23 16:45 → 2023-07-11 17:00 (+291d) | 0.97d → 0.5d | 0d → 22d |  | constraint must start on 2022-09-23 08:00 → none |
| 126 | **建立开发基线** | 2022-09-26 08:00 → 2023-07-11 13:00 (+288d) | 2022-09-28 15:15 → 2023-07-13 10:00 (+288d) | 2.78d → 1.75d | 0d → 22d |  | baseline start none → 2008-09-12 14:36; baseline finish none → 2009-02-25 14:36 |
| 127 | 开发基线建立申请,填写《基线建立申请》 | 2022-09-26 08:00 → 2023-07-11 13:00 (+288d) | 2022-09-26 17:00 → 2023-07-11 17:00 (+288d) | 1d → 0.5d | 0d → 22d |  | constraint must start on 2022-09-26 08:00 → none; baseline start none → 2008-09-15 14:36; baseline finish none → 2008-09-16 14:36 |
| 128 | QA和CM对配置库进行功能审计和物理审计 | 2022-10-11 13:00 → 2023-07-12 08:00 (+274d) | 2022-10-12 12:00 → 2023-07-12 12:00 (+273d) | 1d → 0.5d | 0d → 22d | 144 → 127 | constraint must start on 2022-10-11 13:00 → none |
| 129 | 配置管理在配置库中建立开发基线 | 2022-09-27 13:15 → 2023-07-12 13:00 (+288d) | 2022-09-28 13:15 → 2023-07-12 17:00 (+287d) | 1d → 0.5d | 0d → 22d | 145 → 128 | constraint must start on 2022-09-27 13:15 → none; baseline start none → 2008-09-16 14:36; baseline finish none → 2008-09-17 14:36 |
| 130 | 填写开发基线《发布报告》 | 2022-09-28 13:15 → 2023-07-13 08:00 (+288d) | 2022-09-28 15:15 → 2023-07-13 10:00 (+288d) |  | 0d → 22d |  | constraint must start on 2022-09-28 13:15 → none; baseline start none → 2008-09-17 14:36; baseline finish none → 2008-09-17 14:36 |
| 131 | **实现阶段里程碑** | 2022-09-28 15:45 → 2023-07-13 10:00 (+288d) | 2022-09-30 10:45 → 2023-07-13 17:00 (+286d) | 1.5d → 0.75d | 0d → 22d |  | baseline start none → 2009-02-25 14:36; baseline finish none → 2009-03-02 14:36 |
| 132 | 召开实现里程碑评审会议,填写《编码里程碑状态报告》 | 2022-09-28 15:45 → 2023-07-13 10:00 (+288d) | 2022-09-28 15:45 → 2023-07-13 15:00 (+288d) | 0d → 0.5d | 0d → 22d |  | constraint must start on 2022-09-28 15:45 → none; baseline start none → 2009-02-25 14:36; baseline finish none → 2009-02-26 14:36 |
| 135 | **系统测试** | 2022-09-12 13:00 → 2023-07-07 13:00 (+298d) | 2022-10-21 08:15 → 2023-07-26 12:00 (+278d) | 28.53d → 13d |  |  | baseline start none → 2009-03-04 14:36; baseline finish none → 2009-04-13 09:36 |
| 137 | 测试前进行测试用例自评 | 2022-09-12 13:00 → 2023-07-07 13:00 (+298d) | 2022-09-13 12:00 → 2023-07-10 12:00 (+300d) |  |  | none → 120 | constraint must start on 2022-09-12 13:00 → none |
| 138 | 搭建系统测试环境 | 2022-09-13 13:00 → 2023-07-10 13:00 (+300d) | 2022-09-15 12:00 → 2023-07-11 12:00 (+299d) | 2d → 1d |  |  | constraint must start on 2022-09-13 13:00 → none; baseline start none → 2009-03-05 14:36; baseline finish none → 2009-03-06 14:36 |
| 139 | 执行系统测试 | 2022-09-17 13:00 → 2023-07-11 13:00 (+297d) | 2022-09-27 12:00 → 2023-07-18 12:00 (+294d) | 6.5d → 5d |  |  | constraint must start on 2022-09-17 13:00 → none; baseline start none → 2009-03-06 14:36; baseline finish none → 2009-03-20 14:36 |
| 140 | 执行回归测试 | 2022-09-27 13:00 → 2023-07-18 13:00 (+294d) | 2022-10-03 12:00 → 2023-07-20 12:00 (+290d) | 4d → 2d |  |  | constraint must start on 2022-09-27 13:00 → none |
| 141 | 记录测试中发现的BUG并进行修改 | 2022-10-03 13:00 → 2023-07-20 13:00 (+290d) | 2022-10-05 12:00 → 2023-07-21 12:00 (+289d) | 2d → 1d |  |  | constraint must start on 2022-10-03 13:00 → none; baseline start none → 2009-03-23 09:36; baseline finish none → 2009-04-02 09:36 |
| 142 | 统计分析测试数据编写<系统测试报告> | 2022-10-05 13:30 → 2023-07-21 13:00 (+289d) | 2022-10-07 13:30 → 2023-07-21 17:00 (+287d) | 2d → 0.5d |  |  | constraint must start on 2022-10-05 13:30 → none |
| 143 | **建立测试基线** | 2022-10-07 13:30 → 2023-07-24 08:00 (+290d) | 2022-10-18 13:15 → 2023-07-25 17:00 (+280d) | 6.97d → 2d |  |  | baseline start none → 2009-03-02 14:36; baseline finish none → 2009-03-04 14:36 |
| 144 | 测试基线建立申请,填写《基线建立申请》 | 2022-10-07 13:30 → 2023-07-24 08:00 (+290d) | 2022-10-11 12:00 → 2023-07-24 12:00 (+286d) | 1.94d → 0.5d |  |  | constraint must start on 2022-10-07 13:30 → none; baseline start none → 2009-03-02 14:36; baseline finish none → 2009-03-03 14:36 |
| 145 | QA和CM对配置库进行功能审计和物理审计 | 2022-09-27 08:00 → 2023-07-24 13:00 (+300d) | 2022-09-27 12:00 → 2023-07-24 17:00 (+300d) |  |  | 127 → 144 | constraint must start on 2022-09-27 08:00 → none; resources 质量保证; 配置管理 → 配置管理; 质量保证 |
| 146 | 配置管理在配置库中建立测试基线 | 2022-10-12 13:00 → 2023-07-25 08:00 (+286d) | 2022-10-14 12:00 → 2023-07-25 12:00 (+284d) | 2d → 0.5d |  | 128 → 145 | constraint must start on 2022-10-12 13:00 → none; baseline start none → 2009-03-03 14:36; baseline finish none → 2009-03-04 14:36 |
| 147 | 填写测试基线《发布报告》 | 2022-10-14 13:15 → 2023-07-25 13:00 (+284d) | 2022-10-18 13:15 → 2023-07-25 17:00 (+280d) | 2d → 0.5d |  |  | constraint must start on 2022-10-14 13:15 → none; baseline start none → 2009-03-04 14:36; baseline finish none → 2009-03-04 14:36 |
| 148 | **测试阶段里程碑** | 2022-10-18 13:15 → 2023-07-26 08:00 (+281d) | 2022-10-21 08:15 → 2023-07-26 12:00 (+278d) | 2.5d → 0.5d |  |  | baseline start none → 2009-04-10 09:36; baseline finish none → 2009-04-13 09:36 |
| 149 | 召开测试里程碑评审会议,填写《编码里程碑状态报告》 | 2022-10-18 13:15 → 2023-07-26 08:00 (+281d) | 2022-10-19 08:15 → 2023-07-26 10:00 (+280d) | 0.5d → 0.25d |  |  | constraint must start on 2022-10-18 13:15 → none; resources 配置管理主管; 质量保证主管; 测试; 项目经理 → 项目经理; 配置管理主管; 质量保证主管; 测试; baseline start none → 2009-04-10 09:36; baseline finish none → 2009-04-13 09:36 |
| 152 | **上线及验收 （产品交付）** | 2022-10-04 09:15 → 2023-07-26 13:00 (+295d) | 2022-10-21 09:15 → 2023-08-10 17:00 (+293d) | 13d → 11.5d |  |  |  |
| 154 | 制定《系统上线验收计划》提交客户确认 | 2022-10-09 08:00 → 2023-07-26 13:00 (+290d) | 2022-10-10 17:00 → 2023-07-26 17:00 (+289d) | 1d → 0.5d | 0d → 10d | none → 142 | constraint must start on 2022-10-09 08:00 → none; baseline start none → 2009-04-13 09:36; baseline finish none → 2009-04-14 09:36 |
| 155 | 更新完善《产品交接验收单》 | 2022-10-11 08:00 → 2023-07-27 08:00 (+289d) | 2022-10-11 17:00 → 2023-07-27 12:00 (+289d) | 1d → 0.5d | 0d → 10d |  | constraint must start on 2022-10-11 08:00 → none; baseline start none → 2009-04-13 09:36; baseline finish none → 2009-04-14 09:36 |
| 156 | 更新完善<用户手册> | 2022-10-12 08:00 → 2023-07-27 13:00 (+288d) | 2022-10-12 17:00 → 2023-07-27 17:00 (+288d) | 1d → 0.5d | 0d → 10d |  | constraint must start on 2022-10-12 08:00 → none |
| 157 | QA检查<用户手册>记录不符合项进行修正 | 2022-10-13 08:00 → 2023-07-28 08:00 (+288d) | 2022-10-13 12:00 → 2023-07-28 12:00 (+288d) |  | 0d → 10d |  | constraint must start on 2022-10-13 08:00 → none; resources 质量保证; 设计 → 设计; 质量保证 |
| 158 | 产品进行打包，编写《产品打包清单》 | 2022-10-13 13:00 → 2023-07-28 13:00 (+288d) | 2022-10-13 17:00 → 2023-07-28 17:00 (+288d) |  | 0d → 10d |  | constraint must start on 2022-10-13 13:00 → none |
| 159 | 配置管理员根据《产品交接验收单》将产品基线中的配置项放入产品库 | 2022-10-14 08:00 → 2023-07-31 08:00 (+290d) | 2022-10-14 17:00 → 2023-07-31 12:00 (+290d) | 1d → 0.5d | 0d → 10d |  | constraint must start on 2022-10-14 08:00 → none; baseline start none → 2009-04-14 09:36; baseline finish none → 2009-04-15 09:36 |
| 160 | 系统安装部署,用户确认 | 2022-10-17 08:00 → 2023-07-31 13:00 (+287d) | 2022-10-17 12:00 → 2023-07-31 17:00 (+287d) |  | 0d → 10d |  | constraint must start on 2022-10-17 08:00 → none; baseline start none → 2009-04-13 09:36; baseline finish none → 2009-04-14 09:36 |
| 161 | **验收** | 2022-10-04 09:15 → 2023-07-26 13:00 (+295d) | 2022-10-14 14:15 → 2023-08-08 12:00 (+298d) | 8.5d → 9d |  |  | baseline start none → 2009-04-16 09:36; baseline finish none → 2009-04-17 09:36 |
| 162 | 项目经理向客户提出验收申请，编写《验收计划》 | 2022-10-04 09:15 → 2023-07-26 13:00 (+295d) | 2022-10-05 09:15 → 2023-07-26 17:00 (+294d) | 1d → 0.5d |  | none → 142 | constraint must start on 2022-10-04 09:15 → none; baseline start none → 2009-04-16 09:36; baseline finish none → 2009-04-17 09:36 |
| 163 | 测试人员与客户共同编写《验收测试用例》 | 2022-10-05 09:15 → 2023-07-27 08:00 (+295d) | 2022-10-06 09:15 → 2023-07-27 12:00 (+294d) | 1d → 0.5d |  |  | constraint must start on 2022-10-05 09:15 → none; baseline start none → 2009-04-16 09:36; baseline finish none → 2009-04-16 09:36 |
| 164 | 执行验收测试 | 2022-10-06 09:15 → 2023-07-27 13:00 (+294d) | 2022-10-13 09:15 → 2023-08-07 12:00 (+298d) | 5d → 7d |  |  | constraint must start on 2022-10-06 09:15 → none |
| 165 | 记录验收测试BUG,并进行修正至关闭 | 2022-10-13 09:15 → 2023-08-07 13:00 (+298d) | 2022-10-13 14:15 → 2023-08-07 17:00 (+298d) |  |  |  | constraint must start on 2022-10-13 09:15 → none |
| 166 | 编写《验收报告》,客户确认 | 2022-10-13 14:15 → 2023-08-08 08:00 (+299d) | 2022-10-14 14:15 → 2023-08-08 12:00 (+298d) | 1d → 0.5d |  |  | constraint must start on 2022-10-13 14:15 → none; baseline start none → 2009-04-16 09:36; baseline finish none → 2009-04-16 09:36 |

| ID | Task | Start | Finish | Duration | Total float | Predecessors | Other |
| --- | --- | --- | --- | --- | --- | --- | --- |
| 167 | **建立产品基线** | 2022-10-14 14:30 → 2023-08-08 13:00 (+298d) | 2022-10-20 11:00 → 2023-08-10 12:00 (+294d) | 3.69d → 2d |  |  | baseline start none → 2009-04-10 09:36; baseline finish none → 2009-04-13 09:36 |
| 168 | 产品基线建立申请,填写《基线建立申请》 | 2022-10-14 14:30 → 2023-08-08 13:00 (+298d) | 2022-10-17 14:30 → 2023-08-08 17:00 (+295d) | 1d → 0.5d |  |  | constraint must start on 2022-10-14 14:30 → none; baseline start none → 2009-04-10 09:36; baseline finish none → 2009-04-13 09:36 |
| 169 | QA和CM对配置库进行功能审计和物理审计 | 2022-05-10 16:30 → 2023-08-09 08:00 (+456d) | 2022-05-11 11:30 → 2023-08-09 12:00 (+455d) |  |  | 32 → 168 | constraint must start on 2022-05-10 16:30 → none; resources 质量保证; 配置管理 → 配置管理; 质量保证; baseline start none → 2009-04-10 09:36; baseline finish none → 2009-04-13 09:36 |
| 170 | 配置管理在配置库中建立产品基线 | 2022-10-18 10:45 → 2023-08-09 13:00 (+295d) | 2022-10-19 10:45 → 2023-08-09 17:00 (+294d) | 1d → 0.5d |  | 33 → 169 | constraint must start on 2022-10-18 10:45 → none; baseline start none → 2009-04-10 09:36; baseline finish none → 2009-04-13 09:36 |
| 171 | 填写产品基线《发布报告》 | 2022-10-19 11:00 → 2023-08-10 08:00 (+295d) | 2022-10-20 11:00 → 2023-08-10 12:00 (+294d) | 1d → 0.5d |  |  | constraint must start on 2022-10-19 11:00 → none; baseline start none → 2009-04-10 09:36; baseline finish none → 2009-04-10 09:36 |
| 172 | **验收里程碑** | 2022-10-20 11:15 → 2023-08-10 13:00 (+294d) | 2022-10-21 09:15 → 2023-08-10 17:00 (+293d) | 0.75d → 0.5d |  |  | baseline start none → 2009-04-16 09:36; baseline finish none → 2009-04-17 09:36 |
| 173 | 召开验收里程碑评审会议，填写《验收里程碑状态报告》 | 2022-10-20 11:15 → 2023-08-10 13:00 (+294d) | 2022-10-20 14:15 → 2023-08-10 15:00 (+294d) |  |  |  | constraint must start on 2022-10-20 11:15 → none; resources 项目经理; 质量保证主管; 高级编码; 需求; 测试; 设计 → 项目经理; 需求; 测试; 设计; 质量保证主管; 高级编码; baseline start none → 2009-04-16 09:36; baseline finish none → 2009-04-17 09:36 |
| 176 | **项目总结** | 2022-10-21 09:30 → 2023-08-11 08:00 (+294d) | 2022-10-24 15:15 → 2023-08-14 17:00 (+294d) | 1.59d → 2d |  |  | baseline start none → 2009-04-17 09:36; baseline finish none → 2009-04-20 09:36 |
| 177 | 编写《项目总结报告》,收集相关经验 | 2022-10-21 09:30 → 2023-08-11 08:00 (+294d) | 2022-10-21 14:30 → 2023-08-11 12:00 (+294d) |  |  |  | constraint must start on 2022-10-21 09:30 → none; baseline start none → 2009-04-17 09:36; baseline finish none → 2009-04-20 09:36 |
| 178 | 项目总结大会（总结度量、经验以及教训） | 2022-10-21 14:45 → 2023-08-11 13:00 (+294d) | 2022-10-21 15:15 → 2023-08-11 17:00 (+294d) | 0.06d → 0.5d |  |  | constraint must start on 2022-10-21 14:45 → none; resources 编码; 测试; 配置管理; 设计; 项目经理; 需求; 质量保证; EPG → EPG; 编码; 测试; 配置管理; 设计; 项目经理; 需求; 质量保证; baseline start none → 2009-04-17 09:36; baseline finish none → 2009-04-20 09:36 |
| 179 | 更新《项目总结报告》 | 2022-10-21 15:15 → 2023-08-14 08:00 (+297d) | 2022-10-24 10:15 → 2023-08-14 12:00 (+294d) |  |  |  | constraint must start on 2022-10-21 15:15 → none; baseline start none → 2009-04-17 09:36; baseline finish none → 2009-04-20 09:36 |
| 180 | EPG将度量数据、优秀案例、经验教训等纳入组织财富库 | 2022-10-24 10:15 → 2023-08-14 13:00 (+294d) | 2022-10-24 15:15 → 2023-08-14 17:00 (+294d) |  |  |  | constraint must start on 2022-10-24 10:15 → none; baseline start none → 2009-04-17 09:36; baseline finish none → 2009-04-20 09:36 |
| 182 | **配置管理** | 2022-04-28 08:00 → 2022-07-29 08:00 (+92d) | 2022-09-12 12:00 → 2023-04-10 12:00 (+210d) | 97.5d → 181.5d | 0d → 90.5d |  | baseline start none → 2008-07-22 08:00; baseline finish none → 2009-04-14 12:00 |
| 183 | 搭建配置库 | 2022-04-28 08:00 → 2023-04-10 08:00 (+347d) | 2022-04-28 12:00 → 2023-04-10 12:00 (+347d) |  | 0d → 90.5d | none → 3 | constraint must start on 2022-04-28 08:00 → none |
| 184 | 配置管理 1 | 2022-05-22 08:00 → 2022-07-29 08:00 (+68d) | 2022-05-23 12:00 → 2022-07-29 12:00 (+67d) |  | 0d → 271.5d |  | constraint must start on 2022-05-22 08:00 → start no earlier than 2022-07-29 08:00 |
| 185 | 配置管理 2 | 2022-06-24 08:00 → 2022-08-31 08:00 (+68d) | 2022-06-24 12:00 → 2022-08-31 12:00 (+68d) |  | 0d → 248.5d |  | constraint must start on 2022-06-24 08:00 → start no earlier than 2022-08-31 08:00 |
| 186 | 配置管理 3 | 2022-08-03 08:00 → 2022-09-30 08:00 (+58d) | 2022-08-03 12:00 → 2022-09-30 12:00 (+58d) |  | 0d → 226.5d |  | constraint must start on 2022-08-03 08:00 → start no earlier than 2022-09-30 08:00 |
| 187 | 配置管理 4 | 2022-08-20 08:00 → 2022-10-28 08:00 (+69d) | 2022-08-22 12:00 → 2022-10-28 12:00 (+67d) |  | 0d → 206.5d |  | constraint must start on 2022-08-20 08:00 → start no earlier than 2022-10-28 08:00 |
| 189 | **需求管理** | 2022-06-03 13:00 → 2023-05-05 13:00 (+336d) | 2022-09-12 10:00 → 2023-07-04 10:00 (+295d) | 70.75d → 41.75d | 0d → 29.75d |  |  |
| 190 | 需求跟踪矩阵的维护-需求 | 2022-06-03 13:00 → 2023-05-05 13:00 (+336d) | 2022-06-03 15:00 → 2023-05-05 15:00 (+336d) |  | 0d → 71.25d | none → 49 | constraint must start on 2022-06-03 13:00 → none |
| 191 | 需求跟踪矩阵的维护-设计 | 2022-07-27 13:30 → 2023-06-07 13:00 (+315d) | 2022-07-27 16:00 → 2023-06-07 15:00 (+315d) | 0.31d → 0.25d | 0d → 48.25d |  | constraint must start on 2022-07-27 13:30 → none |
| 192 | 需求跟踪矩阵的维护-编码 | 2022-09-08 08:00 → 2023-07-04 08:00 (+299d) | 2022-09-08 10:00 → 2023-07-04 10:00 (+299d) |  | 0d → 29.75d |  | constraint must start on 2022-09-08 08:00 → none |
| 193 | 需求跟踪矩阵的维护-测试 | 2022-09-10 08:00 → 2023-05-16 08:00 (+248d) | 2022-09-12 10:00 → 2023-05-16 10:00 (+246d) |  | 0d → 64.75d | none → 60 | constraint must start on 2022-09-10 08:00 → none |
| 194 | **周期性质量保证活动** | 2022-05-22 08:00 → 2022-06-30 08:00 (+39d) | 2022-09-20 12:00 → 2022-10-28 12:00 (+38d) |  | 0d → 206.5d |  | baseline start none → 2008-07-21 08:00; baseline finish none → 2009-04-20 12:00 |
| 195 | 周期性质量保证活动 1 | 2022-05-22 08:00 → 2022-06-30 08:00 (+39d) | 2022-05-23 12:00 → 2022-06-30 12:00 (+38d) |  | 0d → 292.5d |  | constraint must start on 2022-05-22 08:00 → start no earlier than 2022-06-30 08:00 |
| 196 | 周期性质量保证活动 2 | 2022-06-22 08:00 → 2022-07-29 08:00 (+37d) | 2022-06-22 12:00 → 2022-07-29 12:00 (+37d) |  | 0d → 271.5d |  | constraint must start on 2022-06-22 08:00 → start no earlier than 2022-07-29 08:00 |
| 197 | 周期性质量保证活动 3 | 2022-06-20 08:00 → 2022-08-31 08:00 (+72d) | 2022-06-20 12:00 → 2022-08-31 12:00 (+72d) |  | 0d → 248.5d |  | constraint must start on 2022-06-20 08:00 → start no earlier than 2022-08-31 08:00 |
| 198 | 周期性质量保证活动 4 | 2022-07-12 08:00 → 2022-09-30 08:00 (+80d) | 2022-07-12 12:00 → 2022-09-30 12:00 (+80d) |  | 0d → 226.5d |  | constraint must start on 2022-07-12 08:00 → start no earlier than 2022-09-30 08:00 |
| 199 | 周期性质量保证活动 5 | 2022-08-10 08:00 → 2022-10-28 08:00 (+79d) | 2022-08-10 12:00 → 2022-10-28 12:00 (+79d) |  | 0d → 206.5d |  | constraint must start on 2022-08-10 08:00 → start no earlier than 2022-10-28 08:00 |
| 200 | **项目周例会跟踪风险和度量** | 2022-04-25 08:00 → 2022-07-01 08:00 (+67d) | 2023-06-19 12:00 → 2022-11-04 12:00 (-227d) | 300.5d → 90.5d | 0d → 201.5d |  | baseline start none → 2008-07-21 08:00; baseline finish none → 2009-04-20 12:00 |
| 201 | 项目周例会跟踪风险和度量 1 | 2022-04-25 08:00 → 2022-07-01 08:00 (+67d) | 2022-04-25 12:00 → 2022-07-01 12:00 (+67d) |  | 0d → 291.5d |  | constraint must start on 2022-04-25 08:00 → start no earlier than 2022-07-01 08:00 |
| 202 | 项目周例会跟踪风险和度量 2 | 2022-05-09 08:00 → 2022-07-15 08:00 (+67d) | 2022-05-09 12:00 → 2022-07-15 12:00 (+67d) |  | 0d → 281.5d |  | constraint must start on 2022-05-09 08:00 → start no earlier than 2022-07-15 08:00 |
| 203 | 项目周例会跟踪风险和度量 3 | 2022-05-23 08:00 → 2022-07-29 08:00 (+67d) | 2022-05-23 12:00 → 2022-07-29 12:00 (+67d) |  | 0d → 271.5d |  | constraint must start on 2022-05-23 08:00 → start no earlier than 2022-07-29 08:00 |
| 204 | 项目周例会跟踪风险和度量 4 | 2022-06-06 08:00 → 2022-08-12 08:00 (+67d) | 2022-06-06 12:00 → 2022-08-12 12:00 (+67d) |  | 0d → 261.5d |  | constraint must start on 2022-06-06 08:00 → start no earlier than 2022-08-12 08:00 |
| 205 | 项目周例会跟踪风险和度量 5 | 2022-06-20 08:00 → 2022-08-26 08:00 (+67d) | 2022-06-20 12:00 → 2022-08-26 12:00 (+67d) |  | 0d → 251.5d |  | constraint must start on 2022-06-20 08:00 → start no earlier than 2022-08-26 08:00 |
| 206 | 项目周例会跟踪风险和度量 6 | 2022-07-04 08:00 → 2022-09-09 08:00 (+67d) | 2022-07-04 12:00 → 2022-09-09 12:00 (+67d) |  | 0d → 241.5d |  | constraint must start on 2022-07-04 08:00 → start no earlier than 2022-09-09 08:00 |
| 207 | 项目周例会跟踪风险和度量 7 | 2022-07-18 08:00 → 2022-09-23 08:00 (+67d) | 2022-07-18 12:00 → 2022-09-23 12:00 (+67d) |  | 0d → 231.5d |  | constraint must start on 2022-07-18 08:00 → start no earlier than 2022-09-23 08:00 |
| 208 | 项目周例会跟踪风险和度量 8 | 2022-08-01 08:00 → 2022-10-07 08:00 (+67d) | 2022-08-01 12:00 → 2022-10-07 12:00 (+67d) |  | 0d → 221.5d |  | constraint must start on 2022-08-01 08:00 → start no earlier than 2022-10-07 08:00 |
| 209 | 项目周例会跟踪风险和度量 9 | 2022-08-15 08:00 → 2022-10-21 08:00 (+67d) | 2022-08-15 12:00 → 2022-10-21 12:00 (+67d) |  | 0d → 211.5d |  | constraint must start on 2022-08-15 08:00 → start no earlier than 2022-10-21 08:00 |
| 210 | 项目周例会跟踪风险和度量 10 | 2022-08-29 08:00 → 2022-11-04 08:00 (+67d) | 2022-08-29 12:00 → 2022-11-04 12:00 (+67d) |  | 0d → 201.5d |  | constraint must start on 2022-08-29 08:00 → start no earlier than 2022-11-04 08:00 |

## Version 3 (data date 2019-01-01, saved 2023-10-30)

Last finish 2023-08-14 → 2023-06-29 (-46d).

Added:

| ID | Task | Duration | Start | Finish | Constraint | Resources |
| --- | --- | --- | --- | --- | --- | --- |
| 188 | 配置管理 5 | 0.5d | 2023-05-17 08:00 | 2023-05-17 12:00 | start no earlier than 2023-05-17 08:00 | 配置管理 |
| 189 | 配置管理 6 | 0.5d | 2023-06-27 08:00 | 2023-06-27 12:00 | start no earlier than 2023-06-27 08:00 | 配置管理 |
| 202 | 周期性质量保证活动 6 | 0.5d | 2023-06-27 08:00 | 2023-06-27 12:00 | start no earlier than 2023-06-27 08:00 | 质量保证 |
| 214 | 项目周例会跟踪风险和度量 11 | 0.5d | 2023-04-24 08:00 | 2023-04-24 12:00 | start no earlier than 2023-04-24 08:00 | 项目组成员 |
| 215 | 项目周例会跟踪风险和度量 12 | 0.5d | 2023-05-08 08:00 | 2023-05-08 12:00 | start no earlier than 2023-05-08 08:00 | 项目组成员 |
| 216 | 项目周例会跟踪风险和度量 13 | 0.5d | 2023-05-22 08:00 | 2023-05-22 12:00 | start no earlier than 2023-05-22 08:00 | 项目组成员 |
| 217 | 项目周例会跟踪风险和度量 14 | 0.5d | 2023-06-05 08:00 | 2023-06-05 12:00 | start no earlier than 2023-06-05 08:00 | 项目组成员 |
| 218 | 项目周例会跟踪风险和度量 15 | 0.5d | 2023-06-19 08:00 | 2023-06-19 12:00 | start no earlier than 2023-06-19 08:00 | 项目组成员 |

Changed:

| ID | Task | Start | Finish | Duration | Total float | Other |
| --- | --- | --- | --- | --- | --- | --- |
| 1 | **赛事运营支持系统** | 2022-06-30 08:00 → 2022-12-01 08:00 (+154d) | 2023-08-14 17:00 → 2023-06-29 17:00 (-46d) | 293d? → 151d? |  |  |
| 2 | **项目立项** | 2023-04-07 08:00 → 2022-12-01 08:00 (-127d) | 2023-04-10 17:00 → 2022-12-06 17:00 (-125d) | 2d → 4d | 0d → 3.5d |  |
| 3 | 了解项目情况,获得初步需求 | 2023-04-07 08:00 → 2022-12-01 08:00 (-127d) | 2023-04-07 17:00 → 2022-12-05 17:00 (-123d) | 1d → 3d | 0d → 3.5d | constraint start no earlier than 2023-04-07 08:00 → start no earlier than 2022-12-01 08:00 |
| 4 | 项目初步估算 | 2023-04-10 08:00 → 2022-12-06 08:00 (-125d) | 2023-04-10 10:00 → 2022-12-06 10:00 (-125d) |  | 0d → 3.5d |  |
| 5 | 项目组织架构，章程制定、资源、职责，干系人RACI整理 | 2023-04-10 10:00 → 2022-12-06 10:00 (-125d) | 2023-04-10 12:00 → 2022-12-06 12:00 (-125d) |  | 0d → 3.5d |  |
| 6 | 召开项目立项会议 | 2023-04-10 13:00 → 2022-12-06 13:00 (-125d) | 2023-04-10 15:00 → 2022-12-06 15:00 (-125d) |  | 90.25d → 147.25d |  |
| 7 | 编写《项目立项报告》 | 2023-04-10 13:00 → 2022-12-06 13:00 (-125d) | 2023-04-10 17:00 → 2022-12-06 17:00 (-125d) |  | 0d → 3.5d |  |
| 9 | **项目计划** | 2023-04-11 08:00 → 2022-12-07 08:00 (-125d) | 2023-05-01 12:00 → 2022-12-30 12:00 (-122d) | 14.5d → 17.5d | 0d → 3.5d |  |
| 10 | **项目估算** | 2023-04-11 08:00 → 2022-12-07 08:00 (-125d) | 2023-04-14 17:00 → 2022-12-12 17:00 (-123d) |  | 0d → 3.5d |  |
| 11 | 确定软件生存周期,初步制定QA,CM计划 | 2023-04-11 08:00 → 2022-12-07 08:00 (-125d) | 2023-04-11 17:00 → 2022-12-07 17:00 (-125d) |  | 0d → 3.5d |  |
| 12 | EPG指导项目经理编写《项目定义过程》 | 2023-04-12 08:00 → 2022-12-08 08:00 (-125d) | 2023-04-12 12:00 → 2022-12-08 12:00 (-125d) |  | 0d → 3.5d |  |
| 13 | 根据初步，进行WBS分解 | 2023-04-12 13:00 → 2022-12-08 13:00 (-125d) | 2023-04-13 12:00 → 2022-12-09 12:00 (-125d) |  | 0d → 3.5d |  |
| 14 | 估算项目的规模,工作量,成本,形成进度计划<项目估算>和项目预算 | 2023-04-13 13:00 → 2022-12-09 13:00 (-125d) | 2023-04-14 12:00 → 2022-12-12 12:00 (-123d) |  | 0d → 3.5d |  |
| 15 | 依据<风险检查表>进行风险识别,初步形成计划 | 2023-04-14 13:00 → 2022-12-12 13:00 (-123d) | 2023-04-14 17:00 → 2022-12-12 17:00 (-123d) |  | 0d → 3.5d |  |
| 16 | **项目计划** | 2023-04-17 08:00 → 2022-12-13 08:00 (-125d) | 2023-04-26 17:00 → 2022-12-27 17:00 (-120d) | 8d → 11d | 0d → 3.5d |  |
| 17 | **项目经理制定项目计划** | 2023-04-17 08:00 → 2022-12-13 08:00 (-125d) | 2023-04-20 17:00 → 2022-12-21 17:00 (-120d) | 4d → 7d | 0d → 3.5d |  |
| 18 | 完善项目进度计划 | 2023-04-17 08:00 → 2022-12-13 08:00 (-125d) | 2023-04-17 17:00 → 2022-12-13 17:00 (-125d) |  | 0d → 3.5d |  |
| 19 | 编写《项目计划书》 | 2023-04-18 08:00 → 2022-12-14 08:00 (-125d) | 2023-04-19 17:00 → 2022-12-20 17:00 (-120d) | 2d → 5d | 0d → 3.5d |  |
| 20 | 编写<度量计划> | 2023-04-20 08:00 → 2022-12-21 08:00 (-120d) | 2023-04-20 17:00 → 2022-12-21 17:00 (-120d) |  | 0d → 3.5d |  |
| 21 | **制定从属计划** | 2023-04-17 08:00 → 2022-12-13 08:00 (-125d) | 2023-04-17 17:00 → 2022-12-13 17:00 (-125d) |  | 3d → 9.5d |  |
| 22 | 编写需求调研计划 | 2023-04-17 08:00 → 2022-12-13 08:00 (-125d) | 2023-04-17 17:00 → 2022-12-13 17:00 (-125d) |  | 3d → 9.5d |  |
| 23 | 完善质量保证计划(QA) | 2023-04-17 08:00 → 2022-12-13 08:00 (-125d) | 2023-04-17 17:00 → 2022-12-13 17:00 (-125d) |  | 3d → 9.5d |  |
| 24 | 完善配置管理计划(CM) | 2023-04-17 08:00 → 2022-12-13 08:00 (-125d) | 2023-04-17 17:00 → 2022-12-13 17:00 (-125d) |  | 3d → 9.5d |  |
| 25 | 编写测试计划 | 2023-04-17 08:00 → 2022-12-13 08:00 (-125d) | 2023-04-17 17:00 → 2022-12-13 17:00 (-125d) |  | 3d → 9.5d |  |
| 26 | 编写<培训计划> | 2023-04-17 08:00 → 2022-12-13 08:00 (-125d) | 2023-04-17 17:00 → 2022-12-13 17:00 (-125d) |  | 3d → 9.5d |  |
| 27 | 项目计划书,从属计划及项目定义过程进行评审 | 2023-04-21 08:00 → 2022-12-22 08:00 (-120d) | 2023-04-21 17:00 → 2022-12-22 17:00 (-120d) |  | 0d → 3.5d |  |
| 28 | 评审中发现的缺陷进行修正 | 2023-04-24 08:00 → 2022-12-23 08:00 (-122d) | 2023-04-24 17:00 → 2022-12-23 17:00 (-122d) |  | 0d → 3.5d |  |
| 29 | 项目计划书的评审与发布 | 2023-04-25 08:00 → 2022-12-26 08:00 (-120d) | 2023-04-25 17:00 → 2022-12-26 17:00 (-120d) |  | 0d → 3.5d |  |
| 30 | 调研计划发给客户 | 2023-04-26 08:00 → 2022-12-27 08:00 (-120d) | 2023-04-26 17:00 → 2022-12-27 17:00 (-120d) |  | 0d → 3.5d |  |
| 31 | **建立计划基线** | 2023-04-27 08:00 → 2022-12-28 08:00 (-120d) | 2023-04-28 17:00 → 2022-12-29 17:00 (-120d) |  | 0d → 3.5d |  |
| 32 | 计划基线建立申请,填写《基线建立申请》 | 2023-04-27 08:00 → 2022-12-28 08:00 (-120d) | 2023-04-27 12:00 → 2022-12-28 12:00 (-120d) |  | 0d → 3.5d |  |
| 33 | QA和CM对配置库进行功能审计和物理审计 | 2023-04-27 13:00 → 2022-12-28 13:00 (-120d) | 2023-04-27 17:00 → 2022-12-28 17:00 (-120d) |  | 0d → 3.5d |  |
| 34 | 配置管理在配置库中建立计划基线 | 2023-04-28 08:00 → 2022-12-29 08:00 (-120d) | 2023-04-28 12:00 → 2022-12-29 12:00 (-120d) |  | 0d → 3.5d |  |
| 35 | 填写计划基线《发布报告》 | 2023-04-28 13:00 → 2022-12-29 13:00 (-120d) | 2023-04-28 17:00 → 2022-12-29 17:00 (-120d) |  | 0d → 3.5d |  |
| 36 | **召开项目培训** | 2023-04-18 08:00 → 2022-12-14 08:00 (-125d) | 2023-04-19 12:00 → 2022-12-15 12:00 (-125d) |  | 83.5d → 140.5d |  |
| 37 | 依据《项目培训计划》组织培训 | 2023-04-18 08:00 → 2022-12-14 08:00 (-125d) | 2023-04-18 12:00 → 2022-12-14 12:00 (-125d) |  | 83.5d → 140.5d |  |
| 38 | 编写培训反馈记录 | 2023-04-18 13:00 → 2022-12-14 13:00 (-125d) | 2023-04-19 12:00 → 2022-12-15 12:00 (-125d) |  | 83.5d → 140.5d |  |
| 39 | **项目计划里程碑** | 2023-05-01 08:00 → 2022-12-30 08:00 (-122d) | 2023-05-01 12:00 → 2022-12-30 12:00 (-122d) |  | 0d → 3.5d |  |
| 40 | 开策划里程碑会议,填写《策划里程碑状态报告》 | 2023-05-01 08:00 → 2022-12-30 08:00 (-122d) | 2023-05-01 10:00 → 2022-12-30 10:00 (-122d) |  | 0d → 3.5d |  |
| 41 | 项目经理根据里程碑数据进行阶段性调整 | 2023-05-01 10:00 → 2022-12-30 10:00 (-122d) | 2023-05-01 12:00 → 2022-12-30 12:00 (-122d) |  | 0d → 3.5d |  |
| 43 | **需求开发** | 2023-05-01 13:00 → 2022-12-30 13:00 (-122d) | 2023-05-18 12:00 → 2023-01-31 12:00 (-107d) | 13d → 22d | 0d → 3.5d |  |
| 44 | **需求调研** | 2023-05-01 13:00 → 2022-12-30 13:00 (-122d) | 2023-05-02 17:00 → 2023-01-03 17:00 (-119d) | 1.5d → 2.5d | 0d → 3.5d |  |
| 45 | 按照《需求调研计划》进行调研，形成调研记录 | 2023-05-01 13:00 → 2022-12-30 13:00 (-122d) | 2023-05-02 12:00 → 2023-01-03 12:00 (-119d) | 1d → 2d | 0d → 3.5d |  |
| 46 | 编写《需求跟踪矩阵》填写原始需求 | 2023-05-02 13:00 → 2023-01-03 13:00 (-119d) | 2023-05-02 17:00 → 2023-01-03 17:00 (-119d) |  | 0d → 3.5d |  |
| 47 | **需求分析** | 2023-05-03 08:00 → 2023-01-04 08:00 (-119d) | 2023-05-16 12:00 → 2023-01-27 17:00 (-109d) | 9.5d → 18d | 0d → 3.5d |  |
| 48 | 分析需求,编写《用户需求说明书》 | 2023-05-03 08:00 → 2023-01-04 08:00 (-119d) | 2023-05-04 17:00 → 2023-01-10 17:00 (-114d) | 2d → 5d | 0d → 3.5d |  |
| 49 | 评审<用户需求说明书>,记录并修改缺陷 | 2023-05-05 08:00 → 2023-01-11 08:00 (-114d) | 2023-05-05 12:00 → 2023-01-11 12:00 (-114d) |  | 0d → 3.5d |  |
| 50 | QA检查<用户需求说明书>并记录不符合项并修改 | 2023-05-05 13:00 → 2023-01-11 13:00 (-114d) | 2023-05-05 17:00 → 2023-01-11 17:00 (-114d) |  | 0d → 3.5d |  |
| 51 | <用户需求说明书>提交客户确认 | 2023-05-08 08:00 → 2023-01-12 08:00 (-116d) | 2023-05-08 12:00 → 2023-01-12 12:00 (-116d) |  | 0d → 3.5d |  |
| 52 | 编写《产品需求说明书》 | 2023-05-08 13:00 → 2023-01-12 13:00 (-116d) | 2023-05-10 12:00 → 2023-01-20 12:00 (-110d) | 2d → 6d | 0d → 3.5d |  |
| 53 | 评审<产品需求说明书>,记录并修改缺陷 | 2023-05-10 13:00 → 2023-01-20 13:00 (-110d) | 2023-05-10 17:00 → 2023-01-20 17:00 (-110d) |  | 0d → 3.5d |  |
| 54 | 完善<项目估算>和《需求跟踪矩阵》 | 2023-05-11 08:00 → 2023-01-23 08:00 (-108d) | 2023-05-11 17:00 → 2023-01-23 17:00 (-108d) |  | 2d → 5d |  |
| 55 | 完善编写《测试计划》 | 2023-05-12 08:00 → 2023-01-24 08:00 (-108d) | 2023-05-12 12:00 → 2023-01-25 17:00 (-107d) | 0.5d → 2d | 2d → 5d |  |
| 56 | 评审《测试计划》并发布 | 2023-05-12 13:00 → 2023-01-26 08:00 (-106d) | 2023-05-15 12:00 → 2023-01-26 17:00 (-109d) |  | 2d → 5d |  |
| 57 | 完善<项目进度计划>，完善<项目计划书> | 2023-05-15 13:00 → 2023-01-27 08:00 (-108d) | 2023-05-16 12:00 → 2023-01-27 17:00 (-109d) |  | 2d → 5d |  |
| 58 | 依据《产品需求说明书》编写《系统测试用例》 | 2023-05-11 08:00 → 2023-01-23 08:00 (-108d) | 2023-05-11 17:00 → 2023-01-24 17:00 (-107d) | 1d → 2d | 0d → 3.5d |  |
| 59 | QA检查《产品需求说明书》和《系统测试用例》 | 2023-05-12 08:00 → 2023-01-25 08:00 (-107d) | 2023-05-12 17:00 → 2023-01-25 17:00 (-107d) |  | 0d → 3.5d |  |
| 60 | 评审<系统测试用例>记录并修改缺陷 | 2023-05-15 08:00 → 2023-01-26 08:00 (-109d) | 2023-05-15 17:00 → 2023-01-26 17:00 (-109d) |  | 0d → 3.5d |  |
| 61 | **建立需求基线** | 2023-05-16 08:00 → 2023-01-27 08:00 (-109d) | 2023-05-17 17:00 → 2023-01-30 17:00 (-107d) |  | 0d → 3.5d |  |
| 62 | 需求基线建立申请,填写《基线建立申请》 | 2023-05-16 08:00 → 2023-01-27 08:00 (-109d) | 2023-05-16 12:00 → 2023-01-27 12:00 (-109d) |  | 0d → 3.5d |  |
| 63 | QA和CM对配置库进行功能和物理审计 | 2023-05-16 13:00 → 2023-01-27 13:00 (-109d) | 2023-05-16 17:00 → 2023-01-27 17:00 (-109d) |  | 0d → 3.5d |  |
| 64 | 配置管理在配置库中建立需求基线 | 2023-05-17 08:00 → 2023-01-30 08:00 (-107d) | 2023-05-17 12:00 → 2023-01-30 12:00 (-107d) |  | 0d → 3.5d |  |
| 65 | 填写需求基线《发布报告》 | 2023-05-17 13:00 → 2023-01-30 13:00 (-107d) | 2023-05-17 17:00 → 2023-01-30 17:00 (-107d) |  | 0d → 3.5d |  |
| 66 | **需求里程碑** | 2023-05-18 08:00 → 2023-01-31 08:00 (-107d) | 2023-05-18 12:00 → 2023-01-31 12:00 (-107d) |  | 0d → 3.5d |  |
| 67 | 需求里程碑会议,填写《需求里程碑状态报告》 | 2023-05-18 08:00 → 2023-01-31 08:00 (-107d) | 2023-05-18 10:00 → 2023-01-31 10:00 (-107d) |  | 0d → 3.5d |  |
| 68 | 项目经理对项目计划进行阶段性调整，完善《需求跟踪矩阵》 | 2023-05-18 10:00 → 2023-01-31 10:00 (-107d) | 2023-05-18 12:00 → 2023-01-31 12:00 (-107d) |  | 0d → 3.5d |  |
| 70 | **系统设计** | 2023-05-18 13:00 → 2023-01-31 13:00 (-107d) | 2023-06-07 12:00 → 2023-03-07 12:00 (-92d) | 14d? → 25d? |  |  |
| 71 | **决策分析** | 2023-05-18 13:00 → 2023-01-31 13:00 (-107d) | 2023-05-19 15:00 → 2023-02-02 12:00 (-106d) | 1.25d → 2d | 0d → 3.5d |  |
| 72 | 完善技术方案,必要情况进行决策分析形成《决策分析报告》 | 2023-05-18 13:00 → 2023-01-31 13:00 (-107d) | 2023-05-19 12:00 → 2023-02-01 12:00 (-107d) |  | 0d → 3.5d |  |
| 73 | 技术解决方案制定，购买复用分析 | 2023-05-19 13:00 → 2023-02-01 13:00 (-107d) | 2023-05-19 15:00 → 2023-02-02 12:00 (-106d) | 0.25d → 1d | 0d → 3.5d |  |

| ID | Task | Start | Finish | Duration | Total float | Other |
| --- | --- | --- | --- | --- | --- | --- |
| 74 | **系统概要设计** | 2023-05-19 15:00 → 2023-02-02 13:00 (-106d) | 2023-05-24 17:00 → 2023-02-13 12:00 (-100d) | 3.25d → 7d | 0.25d → 4.5d |  |
| 75 | 进行总体设计,编写《概要设计书》 | 2023-05-22 08:00 → 2023-02-03 13:00 (-108d) | 2023-05-23 17:00 → 2023-02-10 12:00 (-102d) | 2d → 5d | 0d → 3.5d |  |
| 76 | 评审<概要设计>,记录缺陷并修正 | 2023-05-24 08:00 → 2023-02-10 13:00 (-103d) | 2023-05-24 17:00 → 2023-02-13 12:00 (-100d) |  | 0d → 3.5d |  |
| 77 | 数据库初步设计 | 2023-05-19 15:00 → 2023-02-02 13:00 (-106d) | 2023-05-22 15:00 → 2023-02-03 12:00 (-108d) |  | 11.75d → 22d |  |
| 78 | **系统详细设计** | 2023-05-25 08:00 → 2023-02-13 13:00 (-101d) | 2023-05-31 17:00 → 2023-02-27 17:00 (-93d) | 5d? → 10.5d? |  |  |
| 79 | 依据《概要设计说明书》编写《详细设计说明书》 | 2023-05-25 08:00 → 2023-02-13 13:00 (-101d) | 2023-05-29 17:00 → 2023-02-20 12:00 (-98d) | 3d → 5d | 0d → 3.5d |  |
| 80 | 评审<详细设计>,记录缺陷并修正 | 2023-05-30 08:00 → 2023-02-20 13:00 (-99d) | 2023-05-30 17:00 → 2023-02-21 12:00 (-98d) |  | 0d → 3.5d |  |
| 81 | QA检查<详细设计>记录不符合项并修正 | 2023-05-31 08:00 → 2023-02-21 13:00 (-99d) | 2023-05-31 17:00 → 2023-02-22 12:00 (-98d) |  | 0d → 3.5d |  |
| 82 | 完善《需求跟踪矩阵》 | 2023-05-25 08:00 → 2023-02-13 13:00 (-101d) | 2023-05-25 17:00 → 2023-02-14 12:00 (-100d) |  | 4d → 9.5d |  |
| 83 | 依据《详细设计说明书》编制《单元测试计划》 | 2023-05-31 08:00 → 2023-02-27 08:00 (-93d) | 2023-05-31 17:00 → 2023-02-27 17:00 (-93d) |  |  | constraint start no earlier than 2023-05-31 08:00 → none |
| 84 | 依据《详细设计说明书》《单元测试计划》编制《单元测试用例》 | 2023-05-25 08:00 → 2023-02-13 13:00 (-101d) | 2023-05-25 17:00 → 2023-02-14 12:00 (-100d) |  | 4d → 9.5d |  |
| 85 | 编写<交付件一览表>初稿 | 2023-06-01 08:00 → 2023-02-28 08:00 (-93d) | 2023-06-01 17:00 → 2023-02-28 17:00 (-93d) |  |  |  |
| 86 | 编写<用户操作手册>初稿 | 2023-06-02 08:00 → 2023-03-01 08:00 (-93d) | 2023-06-02 17:00 → 2023-03-02 17:00 (-92d) | 1d → 2d |  |  |
| 87 | 编写<接口列表> | 2023-06-05 08:00 → 2023-03-03 08:00 (-94d) | 2023-06-05 12:00 → 2023-03-03 12:00 (-94d) |  |  |  |
| 88 | 编写<接口定义书> | 2023-06-05 13:00 → 2023-03-03 13:00 (-94d) | 2023-06-06 12:00 → 2023-03-06 12:00 (-92d) |  |  |  |
| 89 | 编写<产品集成计划> | 2023-06-06 13:00 → 2023-03-06 13:00 (-92d) | 2023-06-07 12:00 → 2023-03-07 12:00 (-92d) |  |  |  |
| 90 | **建立设计基线** | 2023-06-01 08:00 → 2023-02-28 08:00 (-93d) | 2023-06-02 17:00 → 2023-03-01 17:00 (-93d) |  | 2d → 3d |  |
| 91 | 设计基线建立申请,填写《基线建立申请》 | 2023-06-01 08:00 → 2023-02-28 08:00 (-93d) | 2023-06-01 12:00 → 2023-02-28 12:00 (-93d) |  | 2d → 3d |  |
| 92 | QA和CM对配置库进行功能审计 | 2023-06-01 13:00 → 2023-02-28 13:00 (-93d) | 2023-06-01 17:00 → 2023-02-28 17:00 (-93d) |  | 2d → 3d |  |
| 93 | 配置管理在配置库中建立设计基线 | 2023-06-02 08:00 → 2023-03-01 08:00 (-93d) | 2023-06-02 12:00 → 2023-03-01 12:00 (-93d) |  | 2d → 3d |  |
| 94 | 填写设计基线《发布报告》 | 2023-06-02 13:00 → 2023-03-01 13:00 (-93d) | 2023-06-02 17:00 → 2023-03-01 17:00 (-93d) |  | 2d → 3d |  |
| 95 | **设计里程碑** | 2023-06-05 08:00 → 2023-03-02 08:00 (-95d) | 2023-06-05 12:00 → 2023-03-02 12:00 (-95d) |  | 2d → 3d |  |
| 96 | 召开设计里程碑评审会议,填写《设计里程碑状态报告》 | 2023-06-05 08:00 → 2023-03-02 08:00 (-95d) | 2023-06-05 10:00 → 2023-03-02 10:00 (-95d) |  | 2d → 3d |  |
| 97 | 项目经理对项目计划进行阶段性调整，完善《需求跟踪矩阵》 | 2023-06-05 10:00 → 2023-03-02 10:00 (-95d) | 2023-06-05 12:00 → 2023-03-02 12:00 (-95d) |  | 2d → 3d |  |
| 99 | **系统编码实现** | 2023-06-07 13:00 → 2023-03-07 13:00 (-92d) | 2023-07-13 17:00 → 2023-04-27 17:00 (-77d) | 26.5d → 37.5d |  |  |
| 100 | **编码** | 2023-06-07 13:00 → 2023-03-07 13:00 (-92d) | 2023-06-30 12:00 → 2023-04-11 12:00 (-80d) | 17d → 25d |  |  |
| 101 | 运营管理系统升级 | 2023-06-07 13:00 → 2023-03-07 13:00 (-92d) | 2023-06-15 12:00 → 2023-03-27 12:00 (-80d) | 6d → 14d |  | constraint start no earlier than 2023-06-05 08:00 → none |
| 102 | 业务协作门户升级 | 2023-06-07 13:00 → 2023-03-07 13:00 (-92d) | 2023-06-16 12:00 → 2023-03-22 12:00 (-86d) | 7d → 11d | 10d → 14d |  |
| 103 | 移动端监控应用系统建设 | 2023-06-15 13:00 → 2023-03-27 13:00 (-80d) | 2023-06-30 12:00 → 2023-04-11 12:00 (-80d) |  |  |  |
| 104 | **代码审查（编码期间完善，日期为截止日期）** | 2023-06-30 13:00 → 2023-04-11 13:00 (-80d) | 2023-07-04 12:00 → 2023-04-13 12:00 (-82d) |  | 28.5d → 54.5d |  |
| 105 | 完善<产品集成计划>（编码期间完善） | 2023-06-30 13:00 → 2023-04-11 13:00 (-80d) | 2023-06-30 17:00 → 2023-04-11 17:00 (-80d) |  | 28.5d → 54.5d |  |
| 106 | 完善<单元测试计划>（编码期间完善） | 2023-07-03 08:00 → 2023-04-12 08:00 (-82d) | 2023-07-03 12:00 → 2023-04-12 12:00 (-82d) |  | 28.5d → 54.5d |  |
| 107 | 核心代码交叉走查（编码期间完善） | 2023-07-03 13:00 → 2023-04-12 13:00 (-82d) | 2023-07-03 17:00 → 2023-04-12 17:00 (-82d) |  | 28.5d → 54.5d |  |
| 108 | 完善单元测试用例（编码期间完善） | 2023-07-04 08:00 → 2023-04-13 08:00 (-82d) | 2023-07-04 12:00 → 2023-04-13 12:00 (-82d) |  | 28.5d → 54.5d |  |
| 109 | **编写单元测试用例（编码期间完善，日期为截止日期）** | 2023-07-04 13:00 → 2023-04-13 13:00 (-82d) | 2023-07-05 12:00 → 2023-04-14 12:00 (-82d) |  | 28.5d → 54.5d |  |
| 110 | 评审＜单元测试用例＞，记录缺陷并修正 | 2023-07-04 13:00 → 2023-04-13 13:00 (-82d) | 2023-07-04 17:00 → 2023-04-13 17:00 (-82d) |  | 28.5d → 54.5d |  |
| 111 | QA检查＜单元测试用例＞记录不符合项并修正 | 2023-07-05 08:00 → 2023-04-14 08:00 (-82d) | 2023-07-05 12:00 → 2023-04-14 12:00 (-82d) |  | 28.5d → 54.5d |  |
| 112 | **执行单元测试** | 2023-06-30 13:00 → 2023-04-11 13:00 (-80d) | 2023-07-06 17:00 → 2023-04-20 17:00 (-77d) | 4.5d → 7.5d |  |  |
| 113 | 依据《单元测试用例》执行单元测试 | 2023-06-30 13:00 → 2023-04-11 13:00 (-80d) | 2023-07-04 12:00 → 2023-04-18 12:00 (-77d) | 2d → 5d |  |  |
| 114 | 单元测试执行过程中发现的缺陷记录《单元测试BUG记录》 | 2023-07-04 13:00 → 2023-04-18 13:00 (-77d) | 2023-07-04 17:00 → 2023-04-18 17:00 (-77d) |  |  |  |
| 115 | 编写《单元测试报告》 | 2023-07-05 08:00 → 2023-04-19 08:00 (-77d) | 2023-07-05 12:00 → 2023-04-19 12:00 (-77d) |  |  |  |
| 116 | QA检查《单元测试报告》和《单元测试BUG记录》 | 2023-07-05 13:00 → 2023-04-19 13:00 (-77d) | 2023-07-05 17:00 → 2023-04-19 17:00 (-77d) |  |  |  |
| 117 | 完善<接口定义书> | 2023-07-06 08:00 → 2023-04-20 08:00 (-77d) | 2023-07-06 12:00 → 2023-04-20 12:00 (-77d) |  |  |  |
| 118 | 接口进行评审 | 2023-07-06 13:00 → 2023-04-20 13:00 (-77d) | 2023-07-06 17:00 → 2023-04-20 17:00 (-77d) |  |  |  |
| 119 | **产品集成** | 2023-07-07 08:00 → 2023-04-21 08:00 (-77d) | 2023-07-11 17:00 → 2023-04-25 17:00 (-77d) |  |  |  |
| 120 | 搭建集成环境 | 2023-07-07 08:00 → 2023-04-21 08:00 (-77d) | 2023-07-07 12:00 → 2023-04-21 12:00 (-77d) |  |  |  |
| 121 | 依据<产品集成检查列表>,<接口列表>进行检查 | 2023-07-07 13:00 → 2023-04-21 13:00 (-77d) | 2023-07-07 17:00 → 2023-04-21 17:00 (-77d) |  | 22d → 45d |  |
| 122 | 进行产品集成,模块集成过程中编写<产品集成模块核查报告> | 2023-07-10 08:00 → 2023-04-24 08:00 (-77d) | 2023-07-10 12:00 → 2023-04-24 12:00 (-77d) |  | 22d → 45d |  |
| 123 | 准备完毕进行产品集成，进行集成测试 | 2023-07-10 13:00 → 2023-04-24 13:00 (-77d) | 2023-07-10 17:00 → 2023-04-24 17:00 (-77d) |  | 22d → 45d |  |
| 124 | 问题修复处理 | 2023-07-11 08:00 → 2023-04-25 08:00 (-77d) | 2023-07-11 12:00 → 2023-04-25 12:00 (-77d) |  | 22d → 45d |  |
| 125 | 编写《产品集成阶段报告》 | 2023-07-11 13:00 → 2023-04-25 13:00 (-77d) | 2023-07-11 17:00 → 2023-04-25 17:00 (-77d) |  | 22d → 45d |  |
| 126 | **建立开发基线** | 2023-07-11 13:00 → 2023-04-25 13:00 (-77d) | 2023-07-13 10:00 → 2023-04-27 10:00 (-77d) |  | 22d → 45d |  |
| 127 | 开发基线建立申请,填写《基线建立申请》 | 2023-07-11 13:00 → 2023-04-25 13:00 (-77d) | 2023-07-11 17:00 → 2023-04-25 17:00 (-77d) |  | 22d → 45d |  |
| 128 | QA和CM对配置库进行功能审计和物理审计 | 2023-07-12 08:00 → 2023-04-26 08:00 (-77d) | 2023-07-12 12:00 → 2023-04-26 12:00 (-77d) |  | 22d → 45d |  |
| 129 | 配置管理在配置库中建立开发基线 | 2023-07-12 13:00 → 2023-04-26 13:00 (-77d) | 2023-07-12 17:00 → 2023-04-26 17:00 (-77d) |  | 22d → 45d |  |
| 130 | 填写开发基线《发布报告》 | 2023-07-13 08:00 → 2023-04-27 08:00 (-77d) | 2023-07-13 10:00 → 2023-04-27 10:00 (-77d) |  | 22d → 45d |  |
| 131 | **实现阶段里程碑** | 2023-07-13 10:00 → 2023-04-27 10:00 (-77d) | 2023-07-13 17:00 → 2023-04-27 17:00 (-77d) |  | 22d → 45d |  |
| 132 | 召开实现里程碑评审会议,填写《编码里程碑状态报告》 | 2023-07-13 10:00 → 2023-04-27 10:00 (-77d) | 2023-07-13 15:00 → 2023-04-27 15:00 (-77d) |  | 22d → 45d |  |
| 133 | 项目经理对项目计划进行阶段性调整，完善《需求跟踪矩阵》 | 2023-07-13 15:00 → 2023-04-27 15:00 (-77d) | 2023-07-13 17:00 → 2023-04-27 17:00 (-77d) |  | 22d → 45d |  |
| 135 | **系统测试** | 2023-07-07 13:00 → 2023-04-21 13:00 (-77d) | 2023-07-26 12:00 → 2023-05-17 12:00 (-70d) | 13d → 18d |  |  |
| 136 | **系统测试** | 2023-07-07 13:00 → 2023-04-21 13:00 (-77d) | 2023-07-21 17:00 → 2023-05-12 17:00 (-70d) | 10.5d → 15.5d |  |  |
| 137 | 测试前进行测试用例自评 | 2023-07-07 13:00 → 2023-04-21 13:00 (-77d) | 2023-07-10 12:00 → 2023-04-24 12:00 (-77d) |  |  |  |
| 138 | 搭建系统测试环境 | 2023-07-10 13:00 → 2023-04-24 13:00 (-77d) | 2023-07-11 12:00 → 2023-04-25 12:00 (-77d) |  |  |  |
| 139 | 执行系统测试 | 2023-07-11 13:00 → 2023-04-25 13:00 (-77d) | 2023-07-18 12:00 → 2023-05-09 12:00 (-70d) | 5d → 10d |  |  |
| 140 | 执行回归测试 | 2023-07-18 13:00 → 2023-05-09 13:00 (-70d) | 2023-07-20 12:00 → 2023-05-11 12:00 (-70d) |  |  |  |
| 141 | 记录测试中发现的BUG并进行修改 | 2023-07-20 13:00 → 2023-05-11 13:00 (-70d) | 2023-07-21 12:00 → 2023-05-12 12:00 (-70d) |  |  |  |
| 142 | 统计分析测试数据编写<系统测试报告> | 2023-07-21 13:00 → 2023-05-12 13:00 (-70d) | 2023-07-21 17:00 → 2023-05-12 17:00 (-70d) |  |  |  |
| 143 | **建立测试基线** | 2023-07-24 08:00 → 2023-05-15 08:00 (-70d) | 2023-07-25 17:00 → 2023-05-16 17:00 (-70d) |  |  |  |
| 144 | 测试基线建立申请,填写《基线建立申请》 | 2023-07-24 08:00 → 2023-05-15 08:00 (-70d) | 2023-07-24 12:00 → 2023-05-15 12:00 (-70d) |  |  |  |
| 145 | QA和CM对配置库进行功能审计和物理审计 | 2023-07-24 13:00 → 2023-05-15 13:00 (-70d) | 2023-07-24 17:00 → 2023-05-15 17:00 (-70d) |  |  |  |

| ID | Task | Start | Finish | Duration | Total float | Other |
| --- | --- | --- | --- | --- | --- | --- |
| 146 | 配置管理在配置库中建立测试基线 | 2023-07-25 08:00 → 2023-05-16 08:00 (-70d) | 2023-07-25 12:00 → 2023-05-16 12:00 (-70d) |  |  |  |
| 147 | 填写测试基线《发布报告》 | 2023-07-25 13:00 → 2023-05-16 13:00 (-70d) | 2023-07-25 17:00 → 2023-05-16 17:00 (-70d) |  |  |  |
| 148 | **测试阶段里程碑** | 2023-07-26 08:00 → 2023-05-17 08:00 (-70d) | 2023-07-26 12:00 → 2023-05-17 12:00 (-70d) |  |  |  |
| 149 | 召开测试里程碑评审会议,填写《编码里程碑状态报告》 | 2023-07-26 08:00 → 2023-05-17 08:00 (-70d) | 2023-07-26 10:00 → 2023-05-17 10:00 (-70d) |  |  |  |
| 150 | 项目经理对项目计划进行阶段性调整 | 2023-07-26 10:00 → 2023-05-17 10:00 (-70d) | 2023-07-26 12:00 → 2023-05-17 12:00 (-70d) |  |  |  |
| 152 | **上线及验收 （产品交付）** | 2023-07-26 13:00 → 2023-05-17 13:00 (-70d) | 2023-08-10 17:00 → 2023-06-27 17:00 (-44d) | 11.5d → 29.5d |  |  |
| 153 | **试运行** | 2023-07-26 13:00 → 2023-05-17 13:00 (-70d) | 2023-07-31 17:00 → 2023-05-22 17:00 (-70d) |  | 10d → 28d |  |
| 154 | 制定《系统上线验收计划》提交客户确认 | 2023-07-26 13:00 → 2023-05-17 13:00 (-70d) | 2023-07-26 17:00 → 2023-05-17 17:00 (-70d) |  | 10d → 28d |  |
| 155 | 更新完善《产品交接验收单》 | 2023-07-27 08:00 → 2023-05-18 08:00 (-70d) | 2023-07-27 12:00 → 2023-05-18 12:00 (-70d) |  | 10d → 28d |  |
| 156 | 更新完善<用户手册> | 2023-07-27 13:00 → 2023-05-18 13:00 (-70d) | 2023-07-27 17:00 → 2023-05-18 17:00 (-70d) |  | 10d → 28d |  |
| 157 | QA检查<用户手册>记录不符合项进行修正 | 2023-07-28 08:00 → 2023-05-19 08:00 (-70d) | 2023-07-28 12:00 → 2023-05-19 12:00 (-70d) |  | 10d → 28d |  |
| 158 | 产品进行打包，编写《产品打包清单》 | 2023-07-28 13:00 → 2023-05-19 13:00 (-70d) | 2023-07-28 17:00 → 2023-05-19 17:00 (-70d) |  | 10d → 28d |  |
| 159 | 配置管理员根据《产品交接验收单》将产品基线中的配置项放入产品库 | 2023-07-31 08:00 → 2023-05-22 08:00 (-70d) | 2023-07-31 12:00 → 2023-05-22 12:00 (-70d) |  | 10d → 28d |  |
| 160 | 系统安装部署,用户确认 | 2023-07-31 13:00 → 2023-05-22 13:00 (-70d) | 2023-07-31 17:00 → 2023-05-22 17:00 (-70d) |  | 10d → 28d |  |
| 161 | **验收** | 2023-07-26 13:00 → 2023-05-17 13:00 (-70d) | 2023-08-08 12:00 → 2023-06-23 12:00 (-46d) | 9d → 27d |  |  |
| 162 | 项目经理向客户提出验收申请，编写《验收计划》 | 2023-07-26 13:00 → 2023-05-17 13:00 (-70d) | 2023-07-26 17:00 → 2023-05-17 17:00 (-70d) |  |  |  |
| 163 | 测试人员与客户共同编写《验收测试用例》 | 2023-07-27 08:00 → 2023-05-18 08:00 (-70d) | 2023-07-27 12:00 → 2023-05-18 12:00 (-70d) |  |  |  |
| 164 | 执行验收测试 | 2023-07-27 13:00 → 2023-05-18 13:00 (-70d) | 2023-08-07 12:00 → 2023-06-22 12:00 (-46d) | 7d → 25d |  |  |
| 165 | 记录验收测试BUG,并进行修正至关闭 | 2023-08-07 13:00 → 2023-06-22 13:00 (-46d) | 2023-08-07 17:00 → 2023-06-22 17:00 (-46d) |  |  |  |
| 166 | 编写《验收报告》,客户确认 | 2023-08-08 08:00 → 2023-06-23 08:00 (-46d) | 2023-08-08 12:00 → 2023-06-23 12:00 (-46d) |  |  |  |
| 167 | **建立产品基线** | 2023-08-08 13:00 → 2023-06-23 13:00 (-46d) | 2023-08-10 12:00 → 2023-06-27 12:00 (-44d) |  |  |  |
| 168 | 产品基线建立申请,填写《基线建立申请》 | 2023-08-08 13:00 → 2023-06-23 13:00 (-46d) | 2023-08-08 17:00 → 2023-06-23 17:00 (-46d) |  |  |  |
| 169 | QA和CM对配置库进行功能审计和物理审计 | 2023-08-09 08:00 → 2023-06-26 08:00 (-44d) | 2023-08-09 12:00 → 2023-06-26 12:00 (-44d) |  |  |  |
| 170 | 配置管理在配置库中建立产品基线 | 2023-08-09 13:00 → 2023-06-26 13:00 (-44d) | 2023-08-09 17:00 → 2023-06-26 17:00 (-44d) |  |  |  |
| 171 | 填写产品基线《发布报告》 | 2023-08-10 08:00 → 2023-06-27 08:00 (-44d) | 2023-08-10 12:00 → 2023-06-27 12:00 (-44d) |  |  |  |
| 172 | **验收里程碑** | 2023-08-10 13:00 → 2023-06-27 13:00 (-44d) | 2023-08-10 17:00 → 2023-06-27 17:00 (-44d) |  |  |  |
| 173 | 召开验收里程碑评审会议，填写《验收里程碑状态报告》 | 2023-08-10 13:00 → 2023-06-27 13:00 (-44d) | 2023-08-10 15:00 → 2023-06-27 15:00 (-44d) |  |  |  |
| 174 | 必要时对相关计划进行相应调整 | 2023-08-10 15:00 → 2023-06-27 15:00 (-44d) | 2023-08-10 17:00 → 2023-06-27 17:00 (-44d) |  |  |  |
| 176 | **项目总结** | 2023-08-11 08:00 → 2023-06-28 08:00 (-44d) | 2023-08-14 17:00 → 2023-06-29 17:00 (-46d) |  |  |  |
| 177 | 编写《项目总结报告》,收集相关经验 | 2023-08-11 08:00 → 2023-06-28 08:00 (-44d) | 2023-08-11 12:00 → 2023-06-28 12:00 (-44d) |  |  |  |
| 178 | 项目总结大会（总结度量、经验以及教训） | 2023-08-11 13:00 → 2023-06-28 13:00 (-44d) | 2023-08-11 17:00 → 2023-06-28 17:00 (-44d) |  |  |  |
| 179 | 更新《项目总结报告》 | 2023-08-14 08:00 → 2023-06-29 08:00 (-46d) | 2023-08-14 12:00 → 2023-06-29 12:00 (-46d) |  |  |  |
| 180 | EPG将度量数据、优秀案例、经验教训等纳入组织财富库 | 2023-08-14 13:00 → 2023-06-29 13:00 (-46d) | 2023-08-14 17:00 → 2023-06-29 17:00 (-46d) |  |  |  |
| 182 | **配置管理** | 2022-07-29 08:00 → 2022-12-06 08:00 (+130d) | 2023-04-10 12:00 → 2023-06-27 12:00 (+78d) | 181.5d → 145.5d | 90.5d → 2.5d |  |
| 183 | 搭建配置库 | 2023-04-10 08:00 → 2022-12-06 08:00 (-125d) | 2023-04-10 12:00 → 2022-12-06 12:00 (-125d) |  | 90.5d → 147.5d |  |
| 184 | 配置管理 1 | 2022-07-29 08:00 → 2022-12-30 08:00 (+154d) | 2022-07-29 12:00 → 2022-12-30 12:00 (+154d) |  | 271.5d → 129.5d | constraint start no earlier than 2022-07-29 08:00 → start no earlier than 2022-12-30 08:00 |
| 185 | 配置管理 2 | 2022-08-31 08:00 → 2023-01-31 08:00 (+153d) | 2022-08-31 12:00 → 2023-01-31 12:00 (+153d) |  | 248.5d → 107.5d | constraint start no earlier than 2022-08-31 08:00 → start no earlier than 2023-01-31 08:00 |
| 186 | 配置管理 3 | 2022-09-30 08:00 → 2023-03-07 08:00 (+158d) | 2022-09-30 12:00 → 2023-03-07 12:00 (+158d) |  | 226.5d → 82.5d | constraint start no earlier than 2022-09-30 08:00 → start no earlier than 2023-03-07 08:00 |
| 187 | 配置管理 4 | 2022-10-28 08:00 → 2023-04-27 08:00 (+181d) | 2022-10-28 12:00 → 2023-04-27 12:00 (+181d) |  | 206.5d → 45.5d | constraint start no earlier than 2022-10-28 08:00 → start no earlier than 2023-04-27 08:00 |
| 191 | **需求管理** | 2023-05-05 13:00 → 2023-01-11 13:00 (-114d) | 2023-07-04 10:00 → 2023-04-13 10:00 (-82d) | 41.75d → 65.75d | 29.75d → 55.75d |  |
| 192 | 需求跟踪矩阵的维护-需求 | 2023-05-05 13:00 → 2023-01-11 13:00 (-114d) | 2023-05-05 15:00 → 2023-01-11 15:00 (-114d) |  | 71.25d → 121.25d |  |
| 193 | 需求跟踪矩阵的维护-设计 | 2023-06-07 13:00 → 2023-03-07 13:00 (-92d) | 2023-06-07 15:00 → 2023-03-07 15:00 (-92d) |  | 48.25d → 82.25d |  |
| 194 | 需求跟踪矩阵的维护-编码 | 2023-07-04 08:00 → 2023-04-13 08:00 (-82d) | 2023-07-04 10:00 → 2023-04-13 10:00 (-82d) |  | 29.75d → 55.75d |  |
| 195 | 需求跟踪矩阵的维护-测试 | 2023-05-16 08:00 → 2023-01-27 08:00 (-109d) | 2023-05-16 10:00 → 2023-01-27 10:00 (-109d) |  | 64.75d → 109.75d |  |
| 196 | **周期性质量保证活动** | 2022-06-30 08:00 → 2022-12-30 08:00 (+183d) | 2022-10-28 12:00 → 2023-06-27 12:00 (+242d) | 86.5d → 127.5d | 206.5d → 2.5d |  |
| 197 | 周期性质量保证活动 1 | 2022-06-30 08:00 → 2022-12-30 08:00 (+183d) | 2022-06-30 12:00 → 2022-12-30 12:00 (+183d) |  | 292.5d → 129.5d | constraint start no earlier than 2022-06-30 08:00 → start no earlier than 2022-12-30 08:00 |
| 198 | 周期性质量保证活动 2 | 2022-07-29 08:00 → 2023-01-31 08:00 (+186d) | 2022-07-29 12:00 → 2023-01-31 12:00 (+186d) |  | 271.5d → 107.5d | constraint start no earlier than 2022-07-29 08:00 → start no earlier than 2023-01-31 08:00 |
| 199 | 周期性质量保证活动 3 | 2022-08-31 08:00 → 2023-03-07 08:00 (+188d) | 2022-08-31 12:00 → 2023-03-07 12:00 (+188d) |  | 248.5d → 82.5d | constraint start no earlier than 2022-08-31 08:00 → start no earlier than 2023-03-07 08:00 |
| 200 | 周期性质量保证活动 4 | 2022-09-30 08:00 → 2023-04-27 08:00 (+209d) | 2022-09-30 12:00 → 2023-04-27 12:00 (+209d) |  | 226.5d → 45.5d | constraint start no earlier than 2022-09-30 08:00 → start no earlier than 2023-04-27 08:00 |
| 201 | 周期性质量保证活动 5 | 2022-10-28 08:00 → 2023-05-17 08:00 (+201d) | 2022-10-28 12:00 → 2023-05-17 12:00 (+201d) |  | 206.5d → 31.5d | constraint start no earlier than 2022-10-28 08:00 → start no earlier than 2023-05-17 08:00 |
| 203 | **项目周例会跟踪风险和度量** | 2022-07-01 08:00 → 2022-12-05 08:00 (+157d) | 2022-11-04 12:00 → 2023-06-19 12:00 (+227d) | 90.5d → 140.5d | 201.5d → 8.5d |  |
| 204 | 项目周例会跟踪风险和度量 1 | 2022-07-01 08:00 → 2022-12-05 08:00 (+157d) | 2022-07-01 12:00 → 2022-12-05 12:00 (+157d) |  | 291.5d → 148.5d | constraint start no earlier than 2022-07-01 08:00 → start no earlier than 2022-12-05 08:00 |
| 205 | 项目周例会跟踪风险和度量 2 | 2022-07-15 08:00 → 2022-12-19 08:00 (+157d) | 2022-07-15 12:00 → 2022-12-19 12:00 (+157d) |  | 281.5d → 138.5d | constraint start no earlier than 2022-07-15 08:00 → start no earlier than 2022-12-19 08:00 |
| 206 | 项目周例会跟踪风险和度量 3 | 2022-07-29 08:00 → 2023-01-02 08:00 (+157d) | 2022-07-29 12:00 → 2023-01-02 12:00 (+157d) |  | 271.5d → 128.5d | constraint start no earlier than 2022-07-29 08:00 → start no earlier than 2023-01-02 08:00 |
| 207 | 项目周例会跟踪风险和度量 4 | 2022-08-12 08:00 → 2023-01-16 08:00 (+157d) | 2022-08-12 12:00 → 2023-01-16 12:00 (+157d) |  | 261.5d → 118.5d | constraint start no earlier than 2022-08-12 08:00 → start no earlier than 2023-01-16 08:00 |
| 208 | 项目周例会跟踪风险和度量 5 | 2022-08-26 08:00 → 2023-01-30 08:00 (+157d) | 2022-08-26 12:00 → 2023-01-30 12:00 (+157d) |  | 251.5d → 108.5d | constraint start no earlier than 2022-08-26 08:00 → start no earlier than 2023-01-30 08:00 |
| 209 | 项目周例会跟踪风险和度量 6 | 2022-09-09 08:00 → 2023-02-13 08:00 (+157d) | 2022-09-09 12:00 → 2023-02-13 12:00 (+157d) |  | 241.5d → 98.5d | constraint start no earlier than 2022-09-09 08:00 → start no earlier than 2023-02-13 08:00 |
| 210 | 项目周例会跟踪风险和度量 7 | 2022-09-23 08:00 → 2023-02-27 08:00 (+157d) | 2022-09-23 12:00 → 2023-02-27 12:00 (+157d) |  | 231.5d → 88.5d | constraint start no earlier than 2022-09-23 08:00 → start no earlier than 2023-02-27 08:00 |
| 211 | 项目周例会跟踪风险和度量 8 | 2022-10-07 08:00 → 2023-03-13 08:00 (+157d) | 2022-10-07 12:00 → 2023-03-13 12:00 (+157d) |  | 221.5d → 78.5d | constraint start no earlier than 2022-10-07 08:00 → start no earlier than 2023-03-13 08:00 |
| 212 | 项目周例会跟踪风险和度量 9 | 2022-10-21 08:00 → 2023-03-27 08:00 (+157d) | 2022-10-21 12:00 → 2023-03-27 12:00 (+157d) |  | 211.5d → 68.5d | constraint start no earlier than 2022-10-21 08:00 → start no earlier than 2023-03-27 08:00 |
| 213 | 项目周例会跟踪风险和度量 10 | 2022-11-04 08:00 → 2023-04-10 08:00 (+157d) | 2022-11-04 12:00 → 2023-04-10 12:00 (+157d) |  | 201.5d → 58.5d | constraint start no earlier than 2022-11-04 08:00 → start no earlier than 2023-04-10 08:00 |
