How a schedule from OmniPlan changed from version to version. A marks actual dates.

## Version 1 (saved 2023-11-10)

Note of the change: 初始化

| ID | WBS | Task | Start | Predecessors | Constraint |
| --- | --- | --- | --- | --- | --- |
| 1 | 1 | **赛事运营支持系统** |  |  |  |
| 2 | 1.1 | **项目立项** |  |  |  |
| 3 |  | 了解项目情况,获得初步需求 | 2022-04-08 |  | start locked to 2022-04-08 |
| 4 |  | 项目初步估算 | 2022-04-26 | 3 | start locked to 2022-04-26 |
| 5 |  | 项目组织架构，章程制定、资源、职责，干系人RACI整理 | 2022-04-26 | 4 | start locked to 2022-04-26 |
| 6 |  | 召开项目立项会议 | 2022-04-26 | 5 | start locked to 2022-04-26 |
| 7 |  | 编写《项目立项报告》 | 2022-04-18 |  | start locked to 2022-04-18 |
| 8 | 1.2 | **项目计划** |  |  |  |
| 9 | 1.2.1 | **项目估算** |  |  |  |
| 10 |  | 确定软件生存周期,初步制定QA,CM计划 | 2022-04-18 | 7 | start locked to 2022-04-18 |
| 11 |  | EPG指导项目经理编写《项目定义过程》 | 2022-04-20 | 10 | start locked to 2022-04-20 |
| 12 |  | 根据初步，进行WBS分解 | 2022-04-21 | 11 | start locked to 2022-04-21 |
| 13 |  | 估算项目的规模,工作量,成本,形成进度计划<项目估算>和项目预算 | 2022-04-22 | 12 | start locked to 2022-04-22 |
| 14 |  | 依据<风险检查表>进行风险识别,初步形成计划 | 2022-04-25 | 13 | start locked to 2022-04-25 |
| 15 | 1.2.2 | **项目计划** |  |  |  |
| 16 | 1.2.2.1 | **项目经理制定项目计划** |  |  |  |
| 17 |  | 完善项目进度计划 | 2022-04-26 | 14 | start locked to 2022-04-26 |
| 18 |  | 编写《项目计划书》 | 2022-04-27 | 17 | start locked to 2022-04-27 |
| 19 |  | 编写<度量计划> | 2022-05-03 | 18 | start locked to 2022-05-03 |
| 20 | 1.2.2.2 | **制定从属计划** |  |  |  |
| 21 |  | 编写需求调研计划 | 2022-05-05 |  | start locked to 2022-05-05 |
| 22 |  | 完善质量保证计划(QA) | 2022-05-05 |  | start locked to 2022-05-05 |
| 23 |  | 完善配置管理计划(CM) | 2022-05-05 |  | start locked to 2022-05-05 |
| 24 |  | 编写测试计划 | 2022-05-05 |  | start locked to 2022-05-05 |
| 25 |  | 编写<培训计划> | 2022-05-05 |  | start locked to 2022-05-05 |
| 26 |  | 项目计划书,从属计划及项目定义过程进行评审 | 2022-05-04 | 16 | start locked to 2022-05-04 |
| 27 |  | 评审中发现的缺陷进行修正 | 2022-05-05 | 26 | start locked to 2022-05-05 |
| 28 |  | 项目计划书的评审与发布 | 2022-05-06 | 27 | start locked to 2022-05-06 |
| 29 |  | 调研计划发给客户 | 2022-05-09 | 28 | start locked to 2022-05-09 |
| 30 | 1.2.3 | **建立计划基线** |  | 20 |  |
| 31 |  | 计划基线建立申请,填写《基线建立申请》 | 2022-05-10 | 29 | start locked to 2022-05-10 |
| 32 |  | QA和CM对配置库进行功能审计和物理审计 | 2022-05-10 | 31 | start locked to 2022-05-10 |
| 33 |  | 配置管理在配置库中建立计划基线 | 2022-05-11 | 32 | start locked to 2022-05-11 |
| 34 |  | 填写计划基线《发布报告》 | 2022-05-11 | 33 | start locked to 2022-05-11 |
| 35 | 1.2.4 | **召开项目培训** |  |  |  |
| 36 |  | 依据《项目培训计划》组织培训 | 2022-05-06 | 25 | start locked to 2022-05-06 |
| 37 |  | 编写培训反馈记录 | 2022-05-06 | 36 | start locked to 2022-05-06 |
| 38 | 1.2.5 | **项目计划里程碑** |  |  |  |
| 39 |  | 开策划里程碑会议,填写《策划里程碑状态报告》 | 2022-05-12 | 30 | start locked to 2022-05-12 |
| 40 |  | 项目经理根据里程碑数据进行阶段性调整 | 2022-05-12 | 39 | start locked to 2022-05-12 |
| 41 | 1.3 | **需求开发** |  |  |  |
| 42 | 1.3.1 | **需求调研** |  |  |  |
| 43 |  | 按照《需求调研计划》进行调研，形成调研记录 | 2022-05-13 | 38 | start locked to 2022-05-13 |
| 44 |  | 编写《需求跟踪矩阵》填写原始需求 | 2022-05-17 | 43 | start locked to 2022-05-17 |
| 45 | 1.3.2 | **需求分析** |  | 42 |  |
| 46 |  | 分析需求,编写《用户需求说明书》 | 2022-05-17 |  | start locked to 2022-05-17 |
| 47 |  | 评审<用户需求说明书>,记录并修改缺陷 | 2022-05-24 | 46 | start locked to 2022-05-24 |
| 48 |  | QA检查<用户需求说明书>并记录不符合项并修改 | 2022-05-24 | 47 | start locked to 2022-05-24 |
| 49 |  | <用户需求说明书>提交客户确认 | 2022-05-25 | 48 | start locked to 2022-05-25 |
| 50 |  | 编写《产品需求说明书》 | 2022-05-25 | 49 | start locked to 2022-05-25 |
| 51 |  | 评审<产品需求说明书>,记录并修改缺陷 | 2022-06-02 | 50 | start locked to 2022-06-02 |
| 52 |  | 完善<项目估算>和《需求跟踪矩阵》 | 2022-06-03 | 51 | start locked to 2022-06-03 |
| 53 |  | 完善编写《测试计划》 | 2022-06-06 | 52 | start locked to 2022-06-06 |
| 54 |  | 评审《测试计划》并发布 | 2022-06-08 | 53 | start locked to 2022-06-08 |
| 55 |  | 完善<项目进度计划>，完善<项目计划书> | 2022-06-09 | 54 | start locked to 2022-06-09 |
| 56 |  | 依据《产品需求说明书》编写《系统测试用例》 | 2022-06-09 |  | start locked to 2022-06-09 |
| 57 |  | QA检查《产品需求说明书》和《系统测试用例》 | 2022-06-15 | 56 | start locked to 2022-06-15 |
| 58 |  | 评审<系统测试用例>记录并修改缺陷 | 2022-06-16 | 57 | start locked to 2022-06-16 |
| 59 | 1.3.3 | **建立需求基线** |  | 58 |  |
| 60 |  | 需求基线建立申请,填写《基线建立申请》 | 2022-06-19 |  | start locked to 2022-06-19 |
| 61 |  | QA和CM对配置库进行功能和物理审计 | 2022-06-20 | 60 | start locked to 2022-06-20 |
| 62 |  | 配置管理在配置库中建立需求基线 | 2022-06-22 | 61 | start locked to 2022-06-22 |
| 63 |  | 填写需求基线《发布报告》 | 2022-06-22 | 62 | start locked to 2022-06-22 |
| 64 | 1.3.4 | **需求里程碑** |  | 59 |  |
| 65 |  | 需求里程碑会议,填写《需求里程碑状态报告》 | 2022-06-23 | 63 | start locked to 2022-06-23 |
| 66 |  | 项目经理对项目计划进行阶段性调整，完善《需求跟踪矩阵》 | 2022-06-23 | 65 | start locked to 2022-06-23 |
| 67 | 1.4 | **系统设计** |  | 41 |  |
| 68 | 1.4.1 | **决策分析** |  |  |  |
| 69 |  | 完善技术方案,必要情况进行决策分析形成《决策分析报告》 | 2022-06-18 |  | start locked to 2022-06-18 |
| 70 |  | 技术解决方案制定，购买复用分析 | 2022-06-23 | 69 | start locked to 2022-06-23 |

| ID | WBS | Task | Duration | Start | Predecessors | Constraint |
| --- | --- | --- | --- | --- | --- | --- |
| 71 | 1.4.2 | **系统概要设计** |  |  | 68 |  |
| 72 |  | 进行总体设计,编写《概要设计书》 |  | 2022-06-25 | 70 | start locked to 2022-06-25 |
| 73 |  | 评审<概要设计>,记录缺陷并修正 |  | 2022-07-04 | 72 | start locked to 2022-07-04 |
| 74 |  | 数据库初步设计 |  | 2022-06-24 |  | start locked to 2022-06-24 |
| 75 | 1.4.3 | **系统详细设计** |  |  | 73 |  |
| 76 |  | 依据《概要设计说明书》编写《详细设计说明书》 |  | 2022-07-05 |  | start locked to 2022-07-05 |
| 77 |  | 评审<详细设计>,记录缺陷并修正 |  | 2022-07-12 | 76 | start locked to 2022-07-12 |
| 78 |  | QA检查<详细设计>记录不符合项并修正 |  | 2022-07-13 | 77 | start locked to 2022-07-13 |
| 79 |  | 完善《需求跟踪矩阵》 |  | 2022-07-05 |  | start locked to 2022-07-05 |
| 80 |  | 依据《详细设计说明书》编制《单元测试计划》 |  | 2022-07-16 |  | start locked to 2022-07-16 |
| 81 |  | 依据《详细设计说明书》《单元测试计划》编制《单元测试用例》 |  | 2022-07-02 |  | start locked to 2022-07-02 |
| 82 |  | 编写<交付件一览表>初稿 |  | 2022-07-20 |  | start locked to 2022-07-20 |
| 83 |  | 编写<用户操作手册>初稿 |  | 2022-07-21 | 82 | start locked to 2022-07-21 |
| 84 |  | 编写<接口列表> |  | 2022-07-23 | 83 | start locked to 2022-07-23 |
| 85 |  | 编写<接口定义书> |  | 2022-07-25 | 84 | start locked to 2022-07-25 |
| 86 |  | 编写<产品集成计划> |  | 2022-07-26 | 85 | start locked to 2022-07-26 |
| 87 | 1.4.9 | **建立设计基线** |  |  |  |  |
| 88 |  | 设计基线建立申请,填写《基线建立申请》 |  | 2022-07-20 | 75 | start locked to 2022-07-20 |
| 89 |  | QA和CM对配置库进行功能审计 |  | 2022-07-20 | 88 | start locked to 2022-07-20 |
| 90 |  | 配置管理在配置库中建立设计基线 |  | 2022-07-21 | 89 | start locked to 2022-07-21 |
| 91 |  | 填写设计基线《发布报告》 |  | 2022-07-21 | 90 | start locked to 2022-07-21 |
| 92 | 1.4.10 | **设计里程碑** |  |  |  |  |
| 93 |  | 召开设计里程碑评审会议,填写《设计里程碑状态报告》 |  | 2022-07-22 | 91 | start locked to 2022-07-22 |
| 94 |  | 项目经理对项目计划进行阶段性调整，完善《需求跟踪矩阵》 |  | 2022-07-22 | 93 | start locked to 2022-07-22 |
| 95 | 1.5 | **系统编码实现** |  |  |  |  |
| 96 | 1.5.1 | **编码** |  |  |  |  |
| 97 |  | 认证登录&个人中心 | 5d | 2022-07-14 | 78 | start locked to 2022-07-14 |
| 98 |  | 账号管理&裁判管理 | 5d | 2022-07-21 | 97 | start locked to 2022-07-21 |
| 99 |  | 赛事管理&排班管理 | 5d | 2022-07-28 | 98 | start locked to 2022-07-28 |
| 100 |  | 消息通知&公告管理 |  | 2022-08-04 | 99 | start locked to 2022-08-04 |
| 101 |  | 排班统计 |  | 2022-08-09 | 100 | start locked to 2022-08-09 |
| 102 |  | 选手管理&系统配置管理 |  | 2022-08-16 | 101 | start locked to 2022-08-16 |
| 103 | 1.5.2 | **代码审查（编码期间完善，日期为截止日期）** |  |  |  |  |
| 104 |  | 完善<产品集成计划>（编码期间完善） |  | 2022-09-05 | 102 | start locked to 2022-09-05 |
| 105 |  | 完善<单元测试计划>（编码期间完善） |  | 2022-09-06 | 104 | start locked to 2022-09-06 |
| 106 |  | 核心代码交叉走查（编码期间完善） |  | 2022-09-07 | 105 | start locked to 2022-09-07 |
| 107 |  | 完善单元测试用例（编码期间完善） |  | 2022-09-08 |  | start locked to 2022-09-08 |
| 108 | 1.5.3 | **编写单元测试用例（编码期间完善，日期为截止日期）** |  |  |  |  |
| 109 |  | 评审＜单元测试用例＞，记录缺陷并修正 |  | 2022-09-09 | 107 | start locked to 2022-09-09 |
| 110 |  | QA检查＜单元测试用例＞记录不符合项并修正 |  | 2022-09-12 | 109 | start locked to 2022-09-12 |
| 111 | 1.5.4 | **执行单元测试** |  |  |  |  |
| 112 |  | 依据《单元测试用例》执行单元测试 |  | 2022-09-05 | 96 | start locked to 2022-09-05 |
| 113 |  | 单元测试执行过程中发现的缺陷记录《单元测试BUG记录》 |  | 2022-09-12 | 112 | start locked to 2022-09-12 |
| 114 |  | 编写《单元测试报告》 |  | 2022-09-13 | 113 | start locked to 2022-09-13 |
| 115 |  | QA检查《单元测试报告》和《单元测试BUG记录》 |  | 2022-09-14 | 114 | start locked to 2022-09-14 |
| 116 |  | 完善<接口定义书> |  | 2022-09-15 | 115 | start locked to 2022-09-15 |
| 117 |  | 接口进行评审 |  | 2022-09-15 | 116 | start locked to 2022-09-15 |
| 118 | 1.5.5 | **产品集成** |  |  |  |  |
| 119 |  | 搭建集成环境 |  | 2022-09-15 | 117 | start locked to 2022-09-15 |
| 120 |  | 依据<产品集成检查列表>,<接口列表>进行检查 |  | 2022-09-19 | 119 | start locked to 2022-09-19 |
| 121 |  | 进行产品集成,模块集成过程中编写<产品集成模块核查报告> |  | 2022-09-20 | 120 | start locked to 2022-09-20 |
| 122 |  | 准备完毕进行产品集成，进行集成测试 |  | 2022-09-21 | 121 | start locked to 2022-09-21 |
| 123 |  | 问题修复处理 |  | 2022-09-22 | 122 | start locked to 2022-09-22 |
| 124 |  | 编写《产品集成阶段报告》 |  | 2022-09-23 | 123 | start locked to 2022-09-23 |
| 125 | 1.5.6 | **建立开发基线** |  |  |  |  |
| 126 |  | 开发基线建立申请,填写《基线建立申请》 |  | 2022-09-26 | 124SS | start locked to 2022-09-26 |
| 127 |  | QA和CM对配置库进行功能审计和物理审计 |  | 2022-09-27 | 126 | start locked to 2022-09-27 |
| 128 |  | 配置管理在配置库中建立开发基线 |  | 2022-09-27 | 127 | start locked to 2022-09-27 |
| 129 |  | 填写开发基线《发布报告》 |  | 2022-09-28 | 128 | start locked to 2022-09-28 |
| 130 | 1.5.7 | **实现阶段里程碑** |  |  |  |  |
| 131 |  | 召开实现里程碑评审会议,填写《编码里程碑状态报告》 |  | 2022-09-28 | 129 | start locked to 2022-09-28 |
| 132 |  | 项目经理对项目计划进行阶段性调整，完善《需求跟踪矩阵》 |  | 2022-09-29 | 131 | start locked to 2022-09-29 |
| 133 | 1.6 | **系统测试** |  |  |  |  |
| 134 | 1.6.1 | **系统测试** |  |  |  |  |
| 135 |  | 测试前进行测试用例自评 |  | 2022-09-12 |  | start locked to 2022-09-12 |
| 136 |  | 搭建系统测试环境 |  | 2022-09-13 | 135 | start locked to 2022-09-13 |
| 137 |  | 执行系统测试 |  | 2022-09-17 | 136 | start locked to 2022-09-17 |
| 138 |  | 执行回归测试 |  | 2022-09-27 | 137 | start locked to 2022-09-27 |
| 139 |  | 记录测试中发现的BUG并进行修改 |  | 2022-10-03 | 138 | start locked to 2022-10-03 |
| 140 |  | 统计分析测试数据编写<系统测试报告> |  | 2022-10-05 | 139 | start locked to 2022-10-05 |

| ID | WBS | Task | Start | Predecessors | Constraint |
| --- | --- | --- | --- | --- | --- |
| 141 | 1.6.2 | **建立测试基线** |  |  |  |
| 142 |  | 测试基线建立申请,填写《基线建立申请》 | 2022-10-07 | 140 | start locked to 2022-10-07 |
| 143 |  | QA和CM对配置库进行功能审计和物理审计 | 2022-10-11 | 142 | start locked to 2022-10-11 |
| 144 |  | 配置管理在配置库中建立测试基线 | 2022-10-12 | 143 | start locked to 2022-10-12 |
| 145 |  | 填写测试基线《发布报告》 | 2022-10-14 | 144 | start locked to 2022-10-14 |
| 146 | 1.6.3 | **测试阶段里程碑** |  |  |  |
| 147 |  | 召开测试里程碑评审会议,填写《编码里程碑状态报告》 | 2022-10-18 | 145 | start locked to 2022-10-18 |
| 148 |  | 项目经理对项目计划进行阶段性调整 | 2022-10-19 | 147 | start locked to 2022-10-19 |
| 149 | 1.7 | **上线及验收 （产品交付）** |  | 133 |  |
| 150 | 1.7.1 | **试运行** |  |  |  |
| 151 |  | 制定《系统上线验收计划》提交客户确认 | 2022-10-09 |  | start locked to 2022-10-09 |
| 152 |  | 更新完善《产品交接验收单》 | 2022-10-11 | 151 | start locked to 2022-10-11 |
| 153 |  | 更新完善<用户手册> | 2022-10-12 | 152 | start locked to 2022-10-12 |
| 154 |  | QA检查<用户手册>记录不符合项进行修正 | 2022-10-13 | 153 | start locked to 2022-10-13 |
| 155 |  | 产品进行打包，编写《产品打包清单》 | 2022-10-13 | 154 | start locked to 2022-10-13 |
| 156 |  | 配置管理员根据《产品交接验收单》将产品基线中的配置项放入产品库 | 2022-10-14 | 155 | start locked to 2022-10-14 |
| 157 |  | 系统安装部署,用户确认 | 2022-10-17 | 156 | start locked to 2022-10-17 |
| 158 | 1.7.2 | **验收** |  |  |  |
| 159 |  | 项目经理向客户提出验收申请，编写《验收计划》 | 2022-10-04 |  | start locked to 2022-10-04 |
| 160 |  | 测试人员与客户共同编写《验收测试用例》 | 2022-10-05 | 159 | start locked to 2022-10-05 |
| 161 |  | 执行验收测试 | 2022-10-06 | 160 | start locked to 2022-10-06 |
| 162 |  | 记录验收测试BUG,并进行修正至关闭 | 2022-10-13 | 161 | start locked to 2022-10-13 |
| 163 |  | 编写《验收报告》,客户确认 | 2022-10-13 | 162 | start locked to 2022-10-13 |
| 164 | 1.7.3 | **建立产品基线** |  |  |  |
| 165 |  | 产品基线建立申请,填写《基线建立申请》 | 2022-10-14 | 163 | start locked to 2022-10-14 |
| 166 |  | QA和CM对配置库进行功能审计和物理审计 | 2022-10-17 | 165 | start locked to 2022-10-17 |
| 167 |  | 配置管理在配置库中建立产品基线 | 2022-10-18 | 166 | start locked to 2022-10-18 |
| 168 |  | 填写产品基线《发布报告》 | 2022-10-19 | 167 | start locked to 2022-10-19 |
| 169 | 1.7.4 | **验收里程碑** |  |  |  |
| 170 |  | 召开验收里程碑评审会议，填写《验收里程碑状态报告》 | 2022-10-20 | 168 | start locked to 2022-10-20 |
| 171 |  | 必要时对相关计划进行相应调整 | 2022-10-20 | 170 | start locked to 2022-10-20 |
| 172 | 1.8 | **项目总结** |  | 169 |  |
| 173 |  | 编写《项目总结报告》,收集相关经验 | 2022-10-21 |  | start locked to 2022-10-21 |
| 174 |  | 项目总结大会（总结度量、经验以及教训） | 2022-10-21 | 173 | start locked to 2022-10-21 |
| 175 |  | 更新《项目总结报告》 | 2022-10-21 | 174 | start locked to 2022-10-21 |
| 176 |  | EPG将度量数据、优秀案例、经验教训等纳入组织财富库 | 2022-10-24 | 175 | start locked to 2022-10-24 |
| 177 | 1.9 | **配置管理** |  |  |  |
| 178 |  | 搭建配置库 | 2022-04-28 |  | start locked to 2022-04-28 |
| 179 |  | 配置管理 1 | 2022-05-22 |  | start locked to 2022-05-22 |
| 180 |  | 配置管理 2 | 2022-06-24 |  | start locked to 2022-06-24 |
| 181 |  | 配置管理 3 | 2022-08-03 |  | start locked to 2022-08-03 |
| 182 |  | 配置管理 4 | 2022-08-20 |  | start locked to 2022-08-20 |
| 183 |  | 配置管理 5 | 2022-08-31 |  | start locked to 2022-08-31 |
| 184 |  | 配置管理 6 | 2022-09-12 |  | start locked to 2022-09-12 |
| 185 | 1.10 | **需求管理** |  |  |  |
| 186 |  | 需求跟踪矩阵的维护-需求 | 2022-06-03 |  | start locked to 2022-06-03 |
| 187 |  | 需求跟踪矩阵的维护-设计 | 2022-07-27 | 67 | start locked to 2022-07-27 |
| 188 |  | 需求跟踪矩阵的维护-编码 | 2022-09-08 | 106 | start locked to 2022-09-08 |
| 189 |  | 需求跟踪矩阵的维护-测试 | 2022-09-10 |  | start locked to 2022-09-10 |
| 190 | 1.11 | **周期性质量保证活动** |  |  |  |
| 191 |  | 周期性质量保证活动 1 | 2022-05-22 |  | start locked to 2022-05-22 |
| 192 |  | 周期性质量保证活动 2 | 2022-06-22 |  | start locked to 2022-06-22 |
| 193 |  | 周期性质量保证活动 3 | 2022-06-20 |  | start locked to 2022-06-20 |
| 194 |  | 周期性质量保证活动 4 | 2022-07-12 |  | start locked to 2022-07-12 |
| 195 |  | 周期性质量保证活动 5 | 2022-08-10 |  | start locked to 2022-08-10 |
| 196 |  | 周期性质量保证活动 6 | 2022-09-20 |  | start locked to 2022-09-20 |
| 197 | 1.12 | **项目周例会跟踪风险和度量** |  |  |  |
| 198 |  | 项目周例会跟踪风险和度量 1 | 2022-04-25 |  | start locked to 2022-04-25 |
| 199 |  | 项目周例会跟踪风险和度量 2 | 2022-05-09 |  | start locked to 2022-05-09 |
| 200 |  | 项目周例会跟踪风险和度量 3 | 2022-05-23 |  | start locked to 2022-05-23 |
| 201 |  | 项目周例会跟踪风险和度量 4 | 2022-06-06 |  | start locked to 2022-06-06 |
| 202 |  | 项目周例会跟踪风险和度量 5 | 2022-06-20 |  | start locked to 2022-06-20 |
| 203 |  | 项目周例会跟踪风险和度量 6 | 2022-07-04 |  | start locked to 2022-07-04 |
| 204 |  | 项目周例会跟踪风险和度量 7 | 2022-07-18 |  | start locked to 2022-07-18 |
| 205 |  | 项目周例会跟踪风险和度量 8 | 2022-08-01 |  | start locked to 2022-08-01 |
| 206 |  | 项目周例会跟踪风险和度量 9 | 2022-08-15 |  | start locked to 2022-08-15 |
| 207 |  | 项目周例会跟踪风险和度量 10 | 2022-08-29 |  | start locked to 2022-08-29 |
| 208 |  | 项目周例会跟踪风险和度量 11 | 2022-09-12 |  | start locked to 2022-09-12 |
| 209 |  | 项目周例会跟踪风险和度量 12 | 2022-05-08 |  | start locked to 2022-05-08 |
| 210 |  | 项目周例会跟踪风险和度量 13 | 2023-05-22 |  | start locked to 2023-05-22 |

| ID | Task | Start | Constraint |
| --- | --- | --- | --- |
| 211 | 项目周例会跟踪风险和度量 14 | 2023-06-05 | start locked to 2023-06-05 |
| 212 | 项目周例会跟踪风险和度量 15 | 2023-06-19 | start locked to 2023-06-19 |

## Version 2 (saved 2023-11-11)

Note of the change: 质量保证优化

Removed: 210 项目周例会跟踪风险和度量 13; 211 项目周例会跟踪风险和度量 14; 212 项目周例会跟踪风险和度量 15

Changed:

| ID | Task | Start | Duration | Other |
| --- | --- | --- | --- | --- |
| 22 | 完善质量保证计划(QA) |  | none → 4.94d |  |
| 191 | 周期性质量保证活动 1 |  | none → 6.25d |  |
| 192 | 周期性质量保证活动 2 | 2022-06-22 → 2022-06-01 (-21d) | none → 7.06d | constraint start locked to 2022-06-22 → start locked to 2022-06-01 |
| 193 | 周期性质量保证活动 3 | 2022-06-20 → 2022-06-14 (-6d) | none → 7.94d | constraint start locked to 2022-06-20 → start locked to 2022-06-14 |
| 194 | 周期性质量保证活动 4 | 2022-07-12 → 2022-06-24 (-18d) | none → 8.94d | constraint start locked to 2022-07-12 → start locked to 2022-06-24 |
| 195 | 周期性质量保证活动 5 | 2022-08-10 → 2022-07-08 (-33d) | none → 10.78d | constraint start locked to 2022-08-10 → start locked to 2022-07-08 |
| 196 | 周期性质量保证活动 6 | 2022-09-20 → 2022-08-31 (-20d) | none → 18.56d | constraint start locked to 2022-09-20 → start locked to 2022-08-31 |
